# MDSS

Schedule from MS Project, 2009-02-02 to 2009-06-30, costs in USD, A marks actual dates.
Misty Heights

## Calendars

- Standard: Mon-Fri 08:00-12:00, 13:00-17:00; Sat-Sun off.

## Resources

| Resource | Group | Rate |
| --- | --- | --- |
| Nathan | Terra Frame | 115 |
| Thomas (Oz) | Terra Frame | 115 |
| Justin | Terra Frame | 115 |
| Darrell | Terra Frame | 115 |
| MRC | Supplier |  |
| Naifeh | Terra Frame |  |
| Marlize | Project |  |
| Mike | Project |  |
| Eric | Terra Frame |  |
| TBD | Terra Frame | 115 |
| Saul | Project |  |
| Sanika | Project |  |
| Lars | Project |  |
| Miguel | Project |  |
| Dave | Project |  |

## Schedule

| ID | WBS | Task | Type | Duration | Start | Finish | Predecessors | Complete | Remaining | Baseline start | Baseline finish | Baseline duration | Total slack | Free slack | Constraint | Resources | Work | Actual work | Cost | Baseline cost | Actual cost | Text1 | Text2 | Text4 | Text3 |
| --- | --- | --- | --- | --- | --- | --- | --- | --- | --- | --- | --- | --- | --- | --- | --- | --- | --- | --- | --- | --- | --- | --- | --- | --- | --- |
| 1 | 1 | **MDSS Implementation** |  | 84d? | 2009-02-02 A | 2009-05-28 |  | 32% | 57.43d? | 2009-02-02 | 2009-05-28 | 83.25d? | 23d |  |  |  | 4255.62h | 1251.27h | 243,363.25 | 257,416.04 | 53,367.91 |  |  |  |  |
| 2 | 1.1 | **Create Prototype (Entomology)** |  | 47d? | 2009-02-02 A | 2009-04-07 |  | 72% | 13.24d? | 2009-02-02 | 2009-03-12 | 28.23d? | 59d | 0d |  |  | 1134.6h | 812.07h | 68,563.25 | 74,152.04 | 53,367.91 |  |  |  |  |
| 3 | 1.1.1 | **System requirements** |  | 47d? | 2009-02-02 A | 2009-04-07 |  | 88% | 5.67d? | 2009-02-02 | 2009-03-09 | 26d? | 59d |  |  |  | 631.4h | 549.4h | 36,271.25 | 31,372.04 | 32,361.25 |  |  |  |  |
| 4 | 1.1.1.1 | Dev: Ontology Schema MIRO |  | 15.5d | 2009-02-02 A | 2009-02-23 A |  | 100% |  | 2009-02-02 | 2009-02-09 | 6d |  |  |  | Thomas (Oz) [85%] | 105.4h | 105.4h | 12,121 | 4,692 | 12,121 | SYS08 | 5 days |  |  |
| 5 | 1.1.1.2 | Dev: Geography MOJO attributes (PostGIS phase 1) |  | 20d | 2009-02-02 A | 2009-02-27 A |  | 100% |  | 2009-02-02 | 2009-02-09 | 5.88d? |  |  | finish no earlier than 2009-02-24 | Nathan [85%] | 136h | 136h | 15,640.25 | 4,600.04 | 15,640.25 | SYS03-01 | 7 days |  |  |
| 6 | 1.1.1.3 | Dev: Geography functions integrated into the query API |  | 5d | 2009-03-02 A | 2009-03-06 A | 5 | 100% |  | 2009-02-09 | 2009-02-17 | 5.88d? |  |  | finish no earlier than 2009-03-06 | Nathan [85%] | 34h | 34h | 3,910 | 4,600 | 3,910 | SYS03-02 | 7 days |  |  |
| 7 | 1.1.1.4 | Dev: GIS visual tool integration |  | 8d | 2009-02-02 A | 2009-03-04 A |  | 100% |  | 2009-02-10 | 2009-02-19 | 7.06d? |  |  |  | Naifeh | 64h | 64h |  | 5,520 |  | SYS10 | 6 days |  |  |
| 8 | 1.1.1.5 | Dev: Geoserver integration |  | 8d | 2009-02-12 A | 2009-03-03 A |  | 100% |  | 2009-02-19 | 2009-03-02 | 7.06d? |  |  | finish no earlier than 2009-03-03 | Naifeh | 64h | 64h |  | 5,520 |  | SYS11 | 6 days |  |  |
| 9 | 1.1.1.6 | Dev: DHTML tree widget selection and integration |  | 8.5d | 2009-02-11 A | 2009-02-23 A |  | 100% |  | 2009-02-11 | 2009-02-17 | 5d? |  |  | start no earlier than 2009-02-11 | Naifeh | 68h | 68h |  |  |  | SYS02 | 5 days | 10 |  |
| 10 | 1.1.1.7 | Dev: import/export an XLS file with a pre-populated headers |  | 7d | 2009-02-11 A | 2009-02-19 A |  | 100% |  | 2009-02-11 | 2009-02-18 | 6d? |  |  | start no earlier than 2009-02-11 | Eric | 56h | 56h |  |  |  | SYS04-01 | 2 days | 11 |  |
| 11 | 1.1.1.8 | Dev: Import XLS file. Map column headers to fields of a class |  | 2d? | 2009-02-20 A | 2009-02-23 A | 10 | 100% |  | 2009-02-19 | 2009-02-20 | 2d? |  |  |  | Eric | 16h | 16h |  |  |  | SYS04-02 | 2 days | 12 |  |
| 12 | 1.1.1.9 | Dev: Represent query criteria in back-end |  | 5d? | 2009-03-09 A | 2009-03-13 | 6 | 15% | 4.25d? | 2009-02-25 | 2009-03-03 | 5d? | 46.41d | 0d |  | Nathan | 40h | 6h | 4,600 |  | 690 | SYS06 | 5 days | 14 |  |
| 13 | 1.1.1.10 | Dev: Save query criteria to the database |  | 1d? | 2009-04-07 | 2009-04-07 | 37 |  |  | 2009-03-04 | 2009-03-04 | 1d? | 59d |  |  | Naifeh | 8h |  |  |  |  | SYS06-03 | 1 day | 15 |  |
| 14 | 1.1.1.11 | Dev: Generic GIS visualisation and output requirements |  | 40h | 2009-03-16 | 2009-03-20 | 18 |  |  | 2009-03-02 | 2009-03-09 | 47.06h | 63.5d | 0d | start no earlier than 2009-03-14 | Naifeh | 40h |  |  | 4,600 |  | MDSS143 |  | 16 |  |
| 15 | 1.1.2 | **Prototype Use cases** |  | 41d? | 2009-02-09 A | 2009-04-06 |  | 53% | 19.39d? | 2009-02-09 | 2009-03-12 | 23.23d? | 60d |  |  |  | 503.2h | 262.67h | 32,292 | 42,780 | 21,006.67 |  |  | 17 |  |
| 16 | 1.1.2.1 | **Search for a geo entity** |  | 15.35d? | 2009-02-20 A | 2009-03-13 |  | 73% | 4.19d? | 2009-02-20 | 2009-03-12 | 14.12d? | 63.5d |  |  |  | 88h | 64h |  | 11,040 |  | MDSS101 |  | 18 |  |
| 17 | 1.1.2.1.1 | Dev: Search for a geo entity - ontology tree |  | 9d | 2009-02-20 A | 2009-03-09 |  | 89% | 1d | 2009-02-20 | 2009-02-26 | 4.71d? | 78d | 0d | finish no earlier than 2009-03-09 | Naifeh | 72h | 64h |  | 3,680 |  | MDSS111 | 4 days | 19 |  |
| 18 | 1.1.2.1.2 | Dev: Search for a geo entity |  | 2d? | 2009-03-12 | 2009-03-13 | 6, 17 |  |  | 2009-02-26 | 2009-03-03 | 2.35d? | 63.5d | 0d | finish no earlier than 2009-03-13 | Naifeh | 16h |  |  | 1,840 |  | MDSS101 |  | 20 |  |
| 19 | 1.1.2.2 | Investigate widget libraries |  | 16h | 2009-02-09 A | 2009-02-10 A |  | 100% |  | 2009-02-09 | 2009-02-10 | 16h |  |  | start no earlier than 2009-02-07 | Darrell | 16h | 16h | 1,840 | 1,840 | 1,840 |  |  | 24 |  |
| 20 | 1.1.2.3 | Dev: login to MDSS |  | 4h | 2009-02-11 A | 2009-02-11 A | 19 | 100% |  | 2009-02-11 | 2009-02-11 | 4h |  |  |  | Darrell | 4h | 4h | 460 | 460 | 460 | MDSS107 |  | 25 |  |
| 21 | 1.1.2.4 | Dev: BE - Submit a mosquito collection |  | 20h | 2009-02-09 A | 2009-02-11 A |  | 100% |  | 2009-02-09 | 2009-02-11 | 20h |  |  | start no earlier than 2009-02-07 | Justin [80%] | 16h | 16h | 1,840 | 1,840 | 1,840 | MDSS024 |  | 26 |  |
| 22 | 1.1.2.5 | Dev: GUI - Submit a mosquito collection |  | 20h | 2009-02-18 A | 2009-02-20 A | 20, 21 | 100% |  | 2009-02-11 | 2009-02-13 | 20h |  |  | start no earlier than 2009-02-18 | Darrell [80%] | 16h | 16h | 1,840 | 1,840 | 1,840 | MDSS024 |  | 27 |  |
| 23 | 1.1.2.6 | Dev: GUI - Adult discriminating dose assay |  | 20h | 2009-02-24 A | 2009-02-26 A | 34, 22 | 100% |  | 2009-02-25 | 2009-02-27 | 20h |  |  |  | Darrell [80%] | 16h | 16h | 1,840 | 1,840 | 1,840 | MDSS004 |  | 35 |  |
| 24 | 1.1.2.7 | Dev: BE - Submit collection points |  | 1.25d? | 2009-02-11 A | 2009-02-12 A | 21 | 100% |  | 2009-02-11 | 2009-02-12 | 1.25d? |  |  |  | Justin [80%] | 8h | 8h | 920 | 920 | 920 | MDSS016 |  | 28 |  |
| 25 | 1.1.2.8 | Dev: BE - Resistance Mechanisms |  | 5.75d | 2009-02-23 A | 2009-03-02 A | 24 | 100% |  | 2009-02-12 | 2009-02-17 | 2.5d? |  |  | finish no earlier than 2009-03-02 | Justin [80%] | 36.8h | 36.8h | 4,232 | 1,840 | 4,232 | MDSS012 |  | 30 |  |
| 26 | 1.1.2.9 | Dev: GUI - Resistance Mechanisms |  | 28.27h | 2009-03-03 A | 2009-03-06 | 25, 23 | 91% | 2.67h | 2009-02-17 | 2009-02-24 | 40h | 49.5d | 0d | finish no earlier than 2009-03-06 | Darrell [80%] | 32h | 29.87h | 3,680 | 3,680 | 3,434.67 | MDSS012 |  | 31 |  |
| 27 | 1.1.2.10 | Dev: GUI - Submit collection points |  | 10h | 2009-03-12 | 2009-03-13 | 32 |  |  | 2009-02-16 | 2009-02-17 | 10h | 73.88d | 0.88d | start no earlier than 2009-02-24 | Darrell [80%] | 8h |  | 920 | 920 |  | MDSS016 |  | 29 |  |
| 28 | 1.1.2.11 | Dev: GUI - Efficacy assay |  | 20h | 2009-03-16 | 2009-03-18 | 27, 35 |  |  | 2009-03-18 | 2009-03-23 | 20h | 73d |  |  | Darrell [80%] | 16h |  | 1,840 | 1,840 |  | MDSS025 |  | 51 |  |
| 29 | 1.1.2.12 | Dev: BE - Resistance cut-off values |  | 1.25d? | 2009-02-20 A | 2009-02-23 A |  | 100% |  | 2009-02-17 | 2009-02-18 | 1.25d? |  |  |  | Justin [80%] | 8h | 8h | 920 | 920 | 920 | MDSS009 |  | 32 |  |
| 30 | 1.1.2.13 | Dev: GUI - Resistance cut-off values |  | 8h | 2009-02-27 A | 2009-02-27 A | 29 | 100% |  | 2009-02-24 | 2009-02-25 | 10h |  |  | start no earlier than 2009-02-27 | Darrell | 8h | 8h | 920 | 920 | 920 | MDSS009 |  | 33 |  |
| 31 | 1.1.2.14 | Dev: BE - Adult knock down assay |  | 1.5d? | 2009-03-09 | 2009-03-10 | 26 |  |  | 2009-03-05 | 2009-03-09 | 1.5d? | 49.5d | 0d |  | Darrell [80%] | 9.6h |  | 1,104 | 1,104 |  | MDSS006 |  | 46 |  |
| 32 | 1.1.2.15 | Dev: GUI - Adult knock down assay |  | 15h | 2009-03-10 | 2009-03-12 | 31 |  |  | 2009-03-13 | 2009-03-16 | 15h | 49.5d | 0d |  | Darrell [80%] | 12h |  | 1,380 | 1,380 |  | MDSS006 |  | 47 |  |
| 33 | 1.1.2.16 | Dev: GUI - Larvae discriminating dose assay |  | 15h | 2009-03-12 | 2009-03-16 | 32 |  |  | 2009-03-16 | 2009-03-18 | 15h | 49.5d | 0d |  | Darrell [80%] | 12h |  | 1,380 | 1,380 |  | MDSS008 |  | 49 | 10 |
| 34 | 1.1.2.17 | Dev: BE - Adult discriminating dose assay |  | 1.25d? | 2009-02-23 A | 2009-02-24 A | 29 | 100% |  | 2009-02-18 | 2009-02-20 | 2.5d? |  |  |  | Justin [80%] | 8h | 8h | 920 | 1,840 | 920 | MDSS004 |  | 34 |  |
| 35 | 1.1.2.18 | Dev: BE - Efficacy assay |  | 2.5d? | 2009-03-12 | 2009-03-16 | 38 |  |  | 2009-03-10 | 2009-03-13 | 2.5d? | 22.75d | 0d |  | Justin [80%] | 16h |  | 1,840 | 1,840 |  | MDSS025 |  | 50 |  |
| 36 | 1.1.2.19 | Dev: Configure import interfaces |  | 32h | 2009-02-24 A | 2009-02-27 A |  | 100% |  | 2009-02-23 | 2009-02-24 | 10h |  |  | start no earlier than 2009-02-24 | Eric [50%] | 16h | 16h |  | 920 |  | MDSS100 |  | 36 |  |
| 37 | 1.1.2.20 | Dev: BE - Entomology dynamic query |  | 6d | 2009-03-23 | 2009-04-06 | 34, 14 |  |  | 2009-02-24 | 2009-02-26 | 2.5d? | 58.5d | 0d | start no earlier than 2009-02-27 | Naifeh [80%] | 38.4h |  |  | 1,840 |  | MDSS145 |  | 38 |  |
| 38 | 1.1.2.21 | Dev: Enquiry integration with selected reporting tool |  | 4d? | 2009-03-06 A | 2009-03-11 | 25 | 50% | 2d? | 2009-02-26 | 2009-03-04 | 4d? | 22.75d | 0d | finish no earlier than 2009-03-11 | Justin | 32h | 16h | 3,680 | 3,680 | 1,840 | SYS09 |  | 40 |  |
| 39 | 1.1.2.22 | Dev: Create formatted dynamic reports |  | 8h | 2009-03-16 | 2009-03-17 | 38, 35 |  |  |  |  |  | 22.75d | 0d |  | Justin [80%] | 6.4h |  | 736 |  |  | MDSS062 |  |  |  |
| 40 | 1.1.2.23 | Dev: MO Importer |  | 40h | 2009-03-27 | 2009-04-02 | 206 |  |  |  |  |  | 62d |  | start no earlier than 2009-03-20 | Eric | 40h |  |  |  |  |  |  | 359 |  |
| 41 | 1.1.2.24 | Dev: change visibility of fields on GUI |  | 40h | 2009-03-17 | 2009-03-23 | 209 |  |  | 2009-03-05 | 2009-03-11 | 32h | 62d | 0d |  | Eric | 40h |  |  | 3,680 |  | MDSS117 |  | 41 |  |
| 42 | 1.2 | Delivery of prototype | milestone | 1d? | 2009-04-08 | 2009-04-08 | 2 |  |  | 2009-03-12 | 2009-03-13 | 1d? | 59d |  |  |  |  |  |  |  |  |  |  | 42 |  |
| 43 | 1.3 | Required delivery of prototype | milestone | 8h | 2009-03-09 | 2009-03-09 |  |  |  | 2009-03-02 | 2009-03-02 | 8h | 81d |  | start no earlier than 2009-03-09 |  |  |  |  |  |  |  |  | 43 |  |
| 44 | 1.4 | Dev:BE - Biochemical cut-off values |  | 1d? | 2009-03-17 | 2009-03-18 | 38, 39 |  |  | 2009-03-04 | 2009-03-05 | 1d? | 22.75d | 0d |  | Justin [80%] | 6.4h |  | 736 | 736 |  | MDSS014 |  | 44 |  |
| 45 | 1.5 | Dev: GUI - Biochemical cut-off values |  | 10h | 2009-03-16 | 2009-03-17 | 33 |  |  | 2009-03-11 | 2009-03-12 | 10h | 49.5d | 0d |  | Darrell [80%] | 8h |  | 920 | 920 |  | MDSS014 |  | 45 |  |
| 46 | 1.6 | Dev: BE - Larvae discriminating dose assay |  | 1.5d? | 2009-03-18 | 2009-03-19 | 44 |  |  | 2009-03-09 | 2009-03-10 | 1.5d? | 22.75d | 0d |  | Justin [80%] | 9.6h |  | 1,104 | 1,104 |  | MDSS008 |  | 48 | 10 |
| 47 | 1.7 | Dev: GUI - Entomology dynamic query |  | 20h | 2009-04-07 | 2009-04-09 | 37 |  |  | 2009-03-03 | 2009-03-05 | 20h | 58.5d |  |  | Darrell [80%] | 16h |  | 1,840 | 1,840 |  | MDSS145 |  | 39 |  |

| ID | WBS | Task | Type | Duration | Start | Finish | Predecessors | Complete | Remaining | Baseline start | Baseline finish | Baseline duration | Total slack | Free slack | Constraint | Resources | Work | Actual work | Text4 |
| --- | --- | --- | --- | --- | --- | --- | --- | --- | --- | --- | --- | --- | --- | --- | --- | --- | --- | --- | --- |
| 48 | 1.8 | **Aquire Geo Data** |  | 25d? | 2009-02-09 A | 2009-03-13 |  | 25% | 18.8d? | 2009-02-10 | 2009-02-24 | 11d? | 76d | 0d |  |  | 1096h | 272h | 52 |
| 49 | 1 | **Mozambique** |  | 24d? | 2009-02-10 A | 2009-03-13 |  | 51% | 11.82d? | 2009-02-10 | 2009-02-24 | 11d? | 76d |  |  |  | 536h | 272h | 53 |
| 50 | 1.1 | **Priority 1: Province Boundaries** |  | 24d | 2009-02-10 A | 2009-03-13 |  | 88% | 3d | 2009-02-10 | 2009-02-23 | 10d | 76d |  |  |  | 192h | 168h | 54 |
| 51 | 1.1.1 | Data set acquired |  | 21d | 2009-02-10 A | 2009-03-10 A |  | 100% |  | 2009-02-10 | 2009-02-18 | 7d |  |  | start no earlier than 2009-02-10 | MRC | 168h | 168h | 55 |
| 52 | 1.1.2 | Data set ready for delivery | milestone | 3d | 2009-03-11 | 2009-03-13 | 51 |  |  | 2009-02-19 | 2009-02-23 | 3d | 76d |  | start no earlier than 2009-02-12 | MRC | 24h |  | 56 |
| 53 | 1.2 | **Priority 1: District Boundaries** |  | 4d? | 2009-02-10 A | 2009-02-13 A |  | 100% |  | 2009-02-10 | 2009-02-13 | 4d? |  |  |  |  | 32h | 32h | 57 |
| 54 | 1.2.1 | Data set acquired |  | 3d | 2009-02-10 A | 2009-02-12 A |  | 100% |  | 2009-02-10 | 2009-02-12 | 3d |  |  | start no earlier than 2009-02-10 | MRC | 24h | 24h | 58 |
| 55 | 1.2.2 | Data set ready for delivery | milestone | 1d? | 2009-02-13 A | 2009-02-13 A | 54 | 100% |  | 2009-02-13 | 2009-02-13 | 1d? |  |  | start no earlier than 2009-02-06 | MRC | 8h | 8h | 59 |
| 56 | 1.3 | **Priority 1: Administrative Post Boundaries** |  | 4d? | 2009-02-10 A | 2009-02-13 A |  | 100% |  | 2009-02-10 | 2009-02-13 | 4d? |  |  |  |  | 32h | 32h | 60 |
| 57 | 1.3.1 | Data set acquired |  | 3d | 2009-02-10 A | 2009-02-12 A |  | 100% |  | 2009-02-10 | 2009-02-12 | 3d |  |  | start no earlier than 2009-02-10 | MRC | 24h | 24h | 61 |
| 58 | 1.3.2 | Data set ready for delivery | milestone | 1d? | 2009-02-13 A | 2009-02-13 A | 57 | 100% |  | 2009-02-13 | 2009-02-13 | 1d? |  |  | start no earlier than 2009-02-06 | MRC | 8h | 8h | 62 |
| 59 | 1.4 | **Priority 1: Locality Boundaries** |  | 4d? | 2009-02-10 A | 2009-02-13 A |  | 100% |  | 2009-02-10 | 2009-02-13 | 4d? |  |  |  |  | 32h | 32h | 63 |
| 60 | 1.4.1 | Data set acquired |  | 1d? | 2009-02-10 A | 2009-02-10 A |  | 100% |  | 2009-02-10 | 2009-02-10 | 1d? |  |  | start no earlier than 2009-02-10 | MRC | 8h | 8h | 64 |
| 61 | 1.4.2 | Data set ready for delivery | milestone | 3d | 2009-02-11 A | 2009-02-13 A | 60 | 100% |  | 2009-02-11 | 2009-02-13 | 3d |  |  | start no earlier than 2009-02-06 | MRC | 24h | 24h | 65 |
| 62 | 1.5 | **Priority 1: Village Points** |  | 10d? | 2009-02-10 | 2009-02-23 |  |  |  | 2009-02-10 | 2009-02-23 | 10d? | 90d |  |  |  | 80h |  | 66 |
| 63 | 1.5.1 | Data set acquired |  | 5d | 2009-02-10 | 2009-02-16 |  |  |  | 2009-02-10 | 2009-02-16 | 5d | 90d | 0d | start no earlier than 2009-02-10 | MRC | 40h |  | 67 |
| 64 | 1.5.2 | Data set ready for delivery | milestone | 5d? | 2009-02-17 | 2009-02-23 | 63 |  |  | 2009-02-17 | 2009-02-23 | 5d? | 90d |  | finish no earlier than 2009-02-13 | MRC | 40h |  | 68 |
| 65 | 1.6 | **Priority 1: Health Facility Points** |  | 11d? | 2009-02-10 | 2009-02-24 |  |  |  | 2009-02-10 | 2009-02-24 | 11d? | 89d |  |  |  | 88h |  | 69 |
| 66 | 1.6.1 | Data set acquired |  | 10d | 2009-02-10 | 2009-02-23 |  |  |  | 2009-02-10 | 2009-02-23 | 10d | 89d | 0d | start no earlier than 2009-02-10 | MRC | 80h |  | 70 |
| 67 | 1.6.2 | Data set ready for delivery | milestone | 1d? | 2009-02-24 | 2009-02-24 | 66 |  |  | 2009-02-24 | 2009-02-24 | 1d? | 89d |  | start no earlier than 2009-02-16 | MRC | 8h |  | 71 |
| 68 | 1.7 | **Priority 1: Sentinel Site Points** |  | 5d? | 2009-02-10 A | 2009-02-16 |  | 20% | 4d? | 2009-02-10 | 2009-02-16 | 5d? | 95d |  |  |  | 40h | 8h | 72 |
| 69 | 1.7.1 | Data set acquired |  | 1d? | 2009-02-10 A | 2009-02-10 A |  | 100% |  | 2009-02-10 | 2009-02-10 | 1d? |  |  | start no earlier than 2009-02-10 | MRC | 8h | 8h | 73 |
| 70 | 1.7.2 | Data set ready for delivery | milestone | 4d? | 2009-02-11 | 2009-02-16 | 69 |  |  | 2009-02-11 | 2009-02-16 | 4d? | 95d |  | finish no earlier than 2009-02-06 | MRC | 32h |  | 74 |
| 71 | 1.8 | **Priority 1: Window Trap Points** |  | 5d? | 2009-02-10 | 2009-02-16 |  |  |  | 2009-02-10 | 2009-02-16 | 5d? | 95d |  |  |  | 40h |  | 75 |
| 72 | 1.8.1 | Data set acquired |  | 1d? | 2009-02-10 | 2009-02-10 |  |  |  | 2009-02-10 | 2009-02-10 | 1d? | 95d | 0d | start no earlier than 2009-02-10 | MRC | 8h |  | 76 |
| 73 | 1.8.2 | Data set ready for delivery | milestone | 4d? | 2009-02-11 | 2009-02-16 | 72 |  |  | 2009-02-11 | 2009-02-16 | 4d? | 95d |  | start no earlier than 2009-02-03 | MRC | 32h |  | 77 |

| ID | WBS | Task | Type | Duration | Start | Finish | Baseline start | Baseline finish | Baseline duration | Total slack | Constraint | Resources | Work | Text4 |
| --- | --- | --- | --- | --- | --- | --- | --- | --- | --- | --- | --- | --- | --- | --- |
| 74 | 2 | **Malawi** |  | 5d? | 2009-02-09 | 2009-02-13 | 2009-02-10 | 2009-02-23 | 10d? | 96d |  |  | 240h | 78 |
| 75 | 2.1 | **Priority 1: Province / Region Boundaries** |  | 5d? | 2009-02-09 | 2009-02-13 | 2009-02-10 | 2009-02-23 | 10d? | 96d |  |  | 40h | 79 |
| 76 | 2.1.2 | Data set delivered | milestone | 5d? | 2009-02-09 | 2009-02-13 | 2009-02-17 | 2009-02-23 | 5d? | 96d | finish no earlier than 2009-02-13 | MRC | 40h | 81 |
| 77 | 2.2 | **Priority 1: District Boundaries** |  | 5d? | 2009-02-09 | 2009-02-13 | 2009-02-10 | 2009-02-23 | 10d? | 96d |  |  | 40h | 82 |
| 78 | 2.2.2 | Data set delivered | milestone | 5d? | 2009-02-09 | 2009-02-13 | 2009-02-17 | 2009-02-23 | 5d? | 96d | finish no earlier than 2009-02-13 | MRC | 40h | 84 |
| 79 | 2.3 | **Priority 1: Traditional Authority Boundaries** |  | 5d? | 2009-02-09 | 2009-02-13 | 2009-02-10 | 2009-02-23 | 10d? | 96d |  |  | 40h | 85 |
| 80 | 2.3.2 | Data set delivered | milestone | 5d? | 2009-02-09 | 2009-02-13 | 2009-02-17 | 2009-02-23 | 5d? | 96d | finish no earlier than 2009-02-13 | MRC | 40h | 87 |
| 81 | 2.4 | **Priority 1: Village Points** |  | 5d? | 2009-02-09 | 2009-02-13 | 2009-02-10 | 2009-02-23 | 10d? | 96d |  |  | 40h | 88 |
| 82 | 2.4.2 | Data set delivered | milestone | 5d? | 2009-02-09 | 2009-02-13 | 2009-02-17 | 2009-02-23 | 5d? | 96d | finish no earlier than 2009-02-13 | MRC | 40h | 90 |
| 83 | 2.5 | **Priority 1: Health Facility Points** |  | 5d? | 2009-02-09 | 2009-02-13 | 2009-02-10 | 2009-02-23 | 10d? | 96d |  |  | 40h | 91 |
| 84 | 2.5.2 | Data set delivered | milestone | 5d? | 2009-02-09 | 2009-02-13 | 2009-02-17 | 2009-02-23 | 5d? | 96d | start no earlier than 2009-02-09 | MRC | 40h | 93 |
| 85 | 2.6 | **Priority 1: Sentinel Site Points** |  | 4d? | 2009-02-10 | 2009-02-13 | 2009-02-10 | 2009-02-19 | 8d? | 96d |  |  | 32h | 94 |
| 86 | 2.6.2 | Data set delivered | milestone | 4d? | 2009-02-10 | 2009-02-13 | 2009-02-16 | 2009-02-19 | 4d? | 96d | start no earlier than 2009-02-10 | MRC | 32h | 96 |
| 87 | 2.7 | **Priority 1: Window Trap Points** |  | 1d? | 2009-02-13 | 2009-02-13 | 2009-02-10 | 2009-02-17 | 6d? | 96d |  |  | 8h | 97 |
| 88 | 2.7.2 | Data set delivered | milestone | 1d? | 2009-02-13 | 2009-02-13 | 2009-02-17 | 2009-02-17 | 1d? | 96d | finish no earlier than 2009-02-13 | MRC | 8h | 99 |
| 89 | 3 | **Zambia** |  | 10d? | 2009-02-09 | 2009-02-20 | 2009-02-10 | 2009-02-23 | 10d? | 91d |  |  | 320h | 100 |
| 90 | 3.1 | **Priority 1: Province Boundaries** |  | 5d? | 2009-02-09 | 2009-02-13 | 2009-02-10 | 2009-02-23 | 10d? | 96d |  |  | 40h | 101 |
| 91 | 3.1.2 | Data set delivered | milestone | 5d? | 2009-02-09 | 2009-02-13 | 2009-02-17 | 2009-02-23 | 5d? | 96d | finish no earlier than 2009-02-13 | MRC | 40h | 103 |
| 92 | 3.2 | **Priority 1: District Boundaries** |  | 5d? | 2009-02-09 | 2009-02-13 | 2009-02-10 | 2009-02-23 | 10d? | 96d |  |  | 40h | 104 |
| 93 | 3.2.2 | Data set delivered | milestone | 5d? | 2009-02-09 | 2009-02-13 | 2009-02-17 | 2009-02-23 | 5d? | 96d | finish no earlier than 2009-02-13 | MRC | 40h | 106 |
| 94 | 3.3 | **Priority 1: Constituency Boundaries** |  | 5d? | 2009-02-09 | 2009-02-13 | 2009-02-10 | 2009-02-23 | 10d? | 96d |  |  | 40h | 107 |
| 95 | 3.3.2 | Data set delivered | milestone | 5d? | 2009-02-09 | 2009-02-13 | 2009-02-17 | 2009-02-23 | 5d? | 96d | start no earlier than 2009-02-09 | MRC | 40h | 109 |
| 96 | 3.4 | **Priority 1: Ward Boundaries** |  | 5d? | 2009-02-09 | 2009-02-13 | 2009-02-10 | 2009-02-23 | 10d? | 96d |  |  | 40h | 110 |
| 97 | 3.4.2 | Data set delivered | milestone | 5d? | 2009-02-09 | 2009-02-13 | 2009-02-17 | 2009-02-23 | 5d? | 96d | finish no earlier than 2009-02-13 | MRC | 40h | 112 |

| ID | WBS | Task | Type | Duration | Start | Finish | Predecessors | Complete | Remaining | Baseline start | Baseline finish | Baseline duration | Total slack | Free slack | Constraint | Deadline | Resources | Work | Actual work | Text4 | Text1 |
| --- | --- | --- | --- | --- | --- | --- | --- | --- | --- | --- | --- | --- | --- | --- | --- | --- | --- | --- | --- | --- | --- |
| 98 | 3.5 | **Priority 1: Village Points** |  | 5d? | 2009-02-16 | 2009-02-20 |  |  |  | 2009-02-10 | 2009-02-23 | 10d? | 91d |  |  |  |  | 40h |  | 113 |  |
| 99 | 3.5.2 | Data set delivered | milestone | 5d? | 2009-02-16 | 2009-02-20 |  |  |  | 2009-02-17 | 2009-02-23 | 5d? | 91d |  | finish no earlier than 2009-02-20 |  | MRC | 40h |  | 115 |  |
| 100 | 3.6 | **Priority 1: Health Facility Points** |  | 5d? | 2009-02-16 | 2009-02-20 |  |  |  | 2009-02-10 | 2009-02-20 | 9d? | 91d |  |  |  |  | 40h |  | 116 |  |
| 101 | 3.6.2 | Data set delivered | milestone | 5d? | 2009-02-16 | 2009-02-20 |  |  |  | 2009-02-16 | 2009-02-20 | 5d? | 91d |  | finish no earlier than 2009-02-20 |  | MRC | 40h |  | 118 |  |
| 102 | 3.7 | **Priority 1: Sentinel Site Points** |  | 5d? | 2009-02-16 | 2009-02-20 |  |  |  | 2009-02-10 | 2009-02-20 | 9d? | 91d |  |  |  |  | 40h |  | 119 |  |
| 103 | 3.7.2 | Data set delivered | milestone | 5d? | 2009-02-16 | 2009-02-20 |  |  |  | 2009-02-16 | 2009-02-20 | 5d? | 91d |  | start no earlier than 2009-02-16 |  | MRC | 40h |  | 121 |  |
| 104 | 3.8 | **Priority 1: Window Trap Points** |  | 5d? | 2009-02-16 | 2009-02-20 |  |  |  | 2009-02-10 | 2009-02-20 | 9d? | 91d |  |  |  |  | 40h |  | 122 |  |
| 105 | 3.8.2 | Data set delivered | milestone | 5d? | 2009-02-16 | 2009-02-20 |  |  |  | 2009-02-16 | 2009-02-20 | 5d? | 91d |  | finish no earlier than 2009-02-20 |  | MRC | 40h |  | 124 |  |
| 106 | 1.9 | Deliver Population data | milestone | 0h | 2009-03-13 | 2009-03-13 | 48 |  |  | 2009-02-24 | 2009-02-24 | 0h | 76d | 0d | start no earlier than 2009-02-18 |  | MRC |  |  | 125 |  |
| 107 | 1.10 | Import Geo data into MDSS schema |  | 8h | 2009-03-16 | 2009-03-16 | 106 |  |  | 2009-02-25 | 2009-02-25 | 8h | 76d |  |  |  |  | 24h |  | 126 |  |
| 108 | 1.11 | Deliver entomology data to be imported |  | 84h | 2009-02-18 A | 2009-03-04 A |  | 100% |  | 2009-02-20 | 2009-02-20 | 0h |  |  | start no earlier than 2009-02-18 |  | Mike | 64h | 64h | 127 |  |
| 109 | 1.12 | **Prototype Test Cases** |  | 2.86d? | 2009-02-23 A | 2009-02-25 A |  | 100% |  | 2009-02-11 | 2009-02-13 | 2.86d? |  |  |  |  |  | 16h | 16h | 128 |  |
| 110 | 1.12.1 | TC: Geo Tree |  | 1.43d? | 2009-02-23 A | 2009-02-24 A |  | 100% |  | 2009-02-11 | 2009-02-12 | 1.43d? |  |  | start no earlier than 2009-02-21 |  | Marlize [70%] | 8h | 8h | 129 | MDSS111 |
| 111 | 1.12.2 | TC: Searching for a geo entity |  | 11.43h | 2009-02-24 A | 2009-02-25 A | 110 | 100% |  | 2009-02-12 | 2009-02-13 | 11.43h |  |  |  |  | Marlize [70%] | 8h | 8h | 130 | MDSS101 |
| 112 | 1.13 | Create test cases for entomology prototype |  | 88h | 2009-02-16 A | 2009-03-02 A |  | 100% |  | 2009-02-11 | 2009-02-20 | 64h |  |  | finish no earlier than 2009-03-02 |  | Mike [50%] | 32h | 32h | 131 |  |
| 113 | 1.14 | Test defect logging procedures |  | 0.71d? | 2009-03-04 A | 2009-03-04 A | 191 | 100% |  | 2009-02-24 | 2009-02-25 | 0.71d? |  |  | start no earlier than 2009-03-04 |  | Marlize [70%] | 4h | 4h | 132 |  |
| 114 | 1.15 | Prepare entomology test data |  | 5.72h | 2009-03-06 A | 2009-03-06 A | 108, 115 | 100% |  | 2009-02-27 | 2009-02-27 | 5.71h |  |  |  |  | Marlize [69.9%] | 4h | 4h | 133 |  |
| 115 | 1.16 | Learn BIRT report writer |  | 11.43h | 2009-03-16 | 2009-03-17 | 113 |  |  | 2009-02-25 | 2009-02-27 | 11.43h | 0d |  | start no earlier than 2009-03-16 |  | Marlize [70%] | 8h |  | 134 |  |
| 116 | 1.17 | **Test Prototype Submit Change Requests** |  | 14.29d? | 2009-03-17 A | 2009-04-06 | 115 |  | 14.29d? | 2009-03-02 | 2009-03-20 | 13.57d? | 57.28d |  |  |  |  | 129.02h |  | 135 |  |
| 117 | 1.17.1 | **Test: Geo entity search and maintanance** |  | 7.86d? | 2009-03-17 A | 2009-03-27 |  |  | 7.86d? | 2009-03-02 | 2009-03-12 | 7.15d? | 38.25d |  |  |  |  | 44.02h |  | 136 |  |
| 118 | 1.17.1.1 | Test: login to MDSS | milestone | 0h | 2009-03-17 A | 2009-03-17 A | 114 | 100% |  | 2009-03-02 | 2009-03-02 | 0h |  |  | start no earlier than 2009-03-09 | 2009-03-08 | Marlize [70%] |  |  | 137 | MDSS107 |
| 119 | 1.17.1.2 | Test: Search for a geo entity - tree |  | 0.36d? | 2009-03-17 | 2009-03-17 | 118 |  |  | 2009-03-03 | 2009-03-03 | 0.36d? | 38.25d | 0d | start no earlier than 2009-03-03 |  | Marlize [70%] | 2h |  | 138 | MDSS111 |
| 120 | 1.17.1.3 | Submit defects: Search for a geo entity - tree |  | 0.71d? | 2009-03-17 | 2009-03-18 | 119 |  |  | 2009-03-03 | 2009-03-04 | 0.71d? | 38.25d | 0d |  |  | Marlize [70%] | 4h |  | 139 | MDSS111 |
| 121 | 1.17.1.4 | Test: create a geo entity |  | 2.86h | 2009-03-18 | 2009-03-18 | 120 |  |  | 2009-03-04 | 2009-03-04 | 2.86h | 38.25d | 0d |  |  | Marlize [70%] | 2h |  | 140 | MDSS101 |
| 122 | 1.17.1.5 | Submit defects: create a geo entity |  | 5.71h | 2009-03-18 | 2009-03-19 | 121 |  |  | 2009-03-04 | 2009-03-05 | 5.71h | 38.25d | 0d |  |  | Marlize [70%] | 4h |  | 141 | MDSS101 |
| 123 | 1.17.1.6 | Test: Search for a geo entity - filtered |  | 0.36d? | 2009-03-19 | 2009-03-19 | 122 |  |  | 2009-03-05 | 2009-03-05 | 0.36d? | 38.25d | 0d |  |  | Marlize [70%] | 2h |  | 142 | MDSS101 |
| 124 | 1.17.1.7 | Submit defects: Search for a geo entity - filtered |  | 0.36d | 2009-03-19 | 2009-03-20 | 123 |  |  | 2009-03-05 | 2009-03-05 | 0.36d | 38.25d | 0d |  |  | Marlize [70%] | 2.02h |  | 143 | MDSS101 |
| 125 | 1.17.1.8 | Test: Search for a geo entity - Hierarchy table |  | 1.43d? | 2009-03-20 | 2009-03-23 | 124 |  |  | 2009-03-05 | 2009-03-09 | 1.43d? | 38.25d | 0d |  |  | Marlize [70%] | 8h |  | 144 | MDSS101 |
| 126 | 1.17.1.9 | TC: IRS - dynamic query |  | 5.71h | 2009-03-23 | 2009-03-24 | 125 |  |  | 2009-03-30 | 2009-03-31 | 5.71h | 38.25d | 0d |  |  | Marlize [70%] | 4h |  | 328 | MDSS132 |
| 127 | 1.17.1.10 | Submit defects: Search for a geo entity - Hierarchy table |  | 0.71d? | 2009-03-24 | 2009-03-25 | 126 |  |  | 2009-03-09 | 2009-03-10 | 0.71d? | 38.25d | 0d |  |  | Marlize [70%] | 4h |  | 145 | MDSS101 |
| 128 | 1.17.1.11 | Test: Search for a geo entity - combo boxes |  | 0.36d? | 2009-03-25 | 2009-03-25 | 127 |  |  | 2009-03-10 | 2009-03-10 | 0.36d? | 38.25d | 0d |  |  | Marlize [70%] | 2h |  | 146 | MDSS101 |
| 129 | 1.17.1.12 | Submit defects: Search for a geo entity - combo boxes |  | 0.36d? | 2009-03-25 | 2009-03-25 | 128 |  |  | 2009-03-10 | 2009-03-10 | 0.36d? | 38.25d | 0d |  |  | Marlize [70%] | 2h |  | 147 | MDSS101 |
| 130 | 1.17.1.13 | Test: Call 101 from 024, 016, 025 |  | 0.36d? | 2009-03-25 | 2009-03-26 | 129 |  |  | 2009-03-10 | 2009-03-11 | 0.36d? | 38.25d | 0d |  |  | Marlize [70%] | 2h |  | 148 | MDSS101 |
| 131 | 1.17.1.14 | Submit defects: Call 101 from 024, 016, 025 |  | 0.36d? | 2009-03-26 | 2009-03-26 | 130 |  |  | 2009-03-11 | 2009-03-11 | 0.36d? | 38.25d | 0d |  |  | Marlize [70%] | 2h |  | 149 | MDSS101 |
| 132 | 1.17.1.15 | Write change request MDSS101, MDSS111 |  | 0.71d? | 2009-03-26 | 2009-03-27 | 131 |  |  | 2009-03-11 | 2009-03-12 | 0.71d? | 38.25d | 0d |  |  | Marlize [70%] | 4h |  | 150 | MDSS101 |
| 133 | 1.17.2 | Test: changing visibility of fields in GUI |  | 1.43h | 2009-03-27 | 2009-03-27 | 132 |  |  | 2009-03-12 | 2009-03-12 | 1.43h | 38.25d | 0d |  |  | Marlize [70%] | 1h |  | 151 | MDSS117 |
| 134 | 1.17.3 | Submit defects: changing visibility of fields in GUI |  | 2.86h | 2009-03-27 | 2009-03-27 | 133 |  |  | 2009-03-12 | 2009-03-12 | 2.86h | 38.25d | 0d |  |  | Marlize [70%] | 2h |  | 152 | MDSS117 |
| 135 | 1.17.4 | Test: Submit a mosquito collection |  | 0.12d? | 2009-03-17 | 2009-03-17 | 112 |  |  | 2009-03-09 | 2009-03-09 | 0.12d? | 65.45d | 0d |  |  | Mike | 1h |  | 153 | MDSS024 |
| 136 | 1.17.5 | Submit defects: Submit a mosquito collection |  | 2h | 2009-03-17 | 2009-03-17 | 135 |  |  | 2009-03-09 | 2009-03-09 | 2h | 65.45d | 0d |  |  | Mike | 2h |  | 154 | MDSS024 |
| 137 | 1.17.6 | Test: search/update/delete record |  | 1h | 2009-03-17 | 2009-03-17 | 136 |  |  | 2009-03-09 | 2009-03-09 | 1h | 65.45d | 0d |  |  | Mike | 1h |  | 155 | MDSS75 |
| 138 | 1.17.7 | Submit defects: search/update/delete |  | 2h | 2009-03-17 | 2009-03-18 | 137 |  |  | 2009-03-09 | 2009-03-09 | 2h | 65.45d | 0d |  |  | Mike | 2h |  | 156 |  |
| 139 | 1.17.8 | Test: Submit collection points |  | 1h | 2009-03-18 | 2009-03-18 | 138 |  |  | 2009-03-09 | 2009-03-09 | 1h | 65.45d | 0d |  |  | Mike | 1h |  | 157 | MDSS016 |
| 140 | 1.17.9 | Submit defects: Submit collection points |  | 1h | 2009-03-18 | 2009-03-18 | 139 |  |  | 2009-03-09 | 2009-03-09 | 1h | 65.45d | 0d |  |  | Mike | 1h |  | 158 | MDSS016 |
| 141 | 1.17.10 | Write change request: Collections |  | 4h | 2009-03-18 | 2009-03-18 | 140 |  |  | 2009-03-10 | 2009-03-10 | 4h | 65.45d | 0d |  |  | Mike | 4h |  | 159 | MDSS024 |
| 142 | 1.17.11 | Test: Import assay and collection data |  | 1h | 2009-03-18 | 2009-03-19 | 141, 114 |  |  | 2009-03-10 | 2009-03-10 | 1h | 65.45d | 0d |  |  | Mike | 1h |  | 160 | MDSS102 |
| 143 | 1.17.12 | Submit defects: generic import functionality |  | 2h | 2009-03-19 | 2009-03-19 | 142 |  |  | 2009-03-10 | 2009-03-10 | 2h | 65.45d | 0d |  |  | Mike | 2h |  | 161 | MDSS102 |
| 144 | 1.17.13 | Test:Species identification |  | 1h | 2009-03-19 | 2009-03-19 | 143 |  |  | 2009-03-10 | 2009-03-10 | 1h | 65.45d | 0d |  |  | Mike | 1h |  | 162 | MDSS012 |
| 145 | 1.17.14 | Submit defects: Species identification |  | 1h | 2009-03-19 | 2009-03-19 | 144 |  |  | 2009-03-11 | 2009-03-11 | 1h | 65.45d | 0d |  |  | Mike | 1h |  | 163 | MDSS012 |
| 146 | 1.17.15 | Test: Infectivity assay |  | 1h | 2009-03-19 | 2009-03-19 | 145 |  |  | 2009-03-11 | 2009-03-11 | 1h | 65.45d | 0d |  |  | Mike | 1h |  | 164 | MDSS022 |
| 147 | 1.17.16 | Submit defects: Infectivity assay |  | 1h | 2009-03-19 | 2009-03-19 | 146 |  |  | 2009-03-11 | 2009-03-11 | 1h | 65.45d | 0d |  |  | Mike | 1h |  | 165 | MDSS022 |
| 148 | 1.17.17 | Test: Molecular assay |  | 2h | 2009-03-19 | 2009-03-20 | 147 |  |  | 2009-03-11 | 2009-03-11 | 2h | 65.45d | 0d |  |  | Mike | 2h |  | 166 | MDSS010 |
| 149 | 1.17.18 | Submit defects: Molecular assay |  | 2h | 2009-03-20 | 2009-03-20 | 148 |  |  | 2009-03-11 | 2009-03-11 | 2h | 65.45d | 0d |  |  | Mike | 2h |  | 167 | MDSS010 |
| 150 | 1.17.19 | Test: Biochemical assay |  | 1h | 2009-03-20 | 2009-03-20 | 149 |  |  | 2009-03-11 | 2009-03-11 | 1h | 65.45d | 0d |  |  | Mike | 1h |  | 168 | MDSS011 |
| 151 | 1.17.20 | Submit defects: Biochemical assay |  | 1h | 2009-03-20 | 2009-03-20 | 150 |  |  | 2009-03-12 | 2009-03-12 | 1h | 65.45d | 0d |  |  | Mike | 1h |  | 169 | MDSS011 |
| 152 | 1.17.21 | Test: Biochemical cut-off values |  | 1h | 2009-03-20 | 2009-03-20 | 151 |  |  | 2009-03-12 | 2009-03-12 | 1h | 65.45d | 0d |  |  | Mike | 1h |  | 170 | MDSS014 |
| 153 | 1.17.22 | Submit defects: Biochemical cut-off values |  | 1h | 2009-03-20 | 2009-03-20 | 152 |  |  | 2009-03-12 | 2009-03-12 | 1h | 65.45d | 0d |  |  | Mike | 1h |  | 171 | MDSS014 |
| 154 | 1.17.23 | Write change request: Mechanisms |  | 4h | 2009-03-20 | 2009-03-23 | 153 |  |  | 2009-03-12 | 2009-03-12 | 4h | 65.45d | 0d |  |  | Mike | 4h |  | 172 |  |
| 155 | 1.17.24 | Test: Adult discriminating dose assay |  | 0.25d? | 2009-03-23 | 2009-03-23 | 154 |  |  | 2009-03-12 | 2009-03-13 | 0.25d? | 65.45d | 0d |  |  | Mike | 2h |  | 173 | MDSS004 |
| 156 | 1.17.25 | Submit defects: Adult discriminating dose assay |  | 2h | 2009-03-23 | 2009-03-23 | 155 |  |  | 2009-03-13 | 2009-03-13 | 2h | 65.45d | 0d |  |  | Mike | 2h |  | 174 | MDSS004 |
| 157 | 1.17.26 | Test: Larvae discriminating dose assay |  | 0.12d? | 2009-03-23 | 2009-03-23 | 156 |  |  | 2009-03-13 | 2009-03-13 | 0.12d? | 65.45d | 0d |  |  | Mike | 1h |  | 175 | MDSS008 |
| 158 | 1.17.27 | Submit defects: Larvae discriminating dose assay |  | 1h | 2009-03-23 | 2009-03-24 | 157 |  |  | 2009-03-13 | 2009-03-13 | 1h | 65.45d | 0d |  |  | Mike | 1h |  | 176 | MDSS008 |
| 159 | 1.17.28 | Test: Adult knock down assay |  | 0.12d? | 2009-03-24 | 2009-03-24 | 158 |  |  | 2009-03-13 | 2009-03-13 | 0.12d? | 65.45d | 0d |  |  | Mike | 1h |  | 177 | MDSS006 |
| 160 | 1.17.29 | Submit defects: Adult knock down assay |  | 1h | 2009-03-24 | 2009-03-24 | 159 |  |  | 2009-03-13 | 2009-03-13 | 1h | 65.45d | 0d |  |  | Mike | 1h |  | 178 | MDSS006 |
| 161 | 1.17.30 | Test: Resistance cut-off values |  | 1h | 2009-03-24 | 2009-03-24 | 160 |  |  | 2009-03-13 | 2009-03-13 | 1h | 65.45d | 0d |  |  | Mike | 1h |  | 179 | MDSS009 |
| 162 | 1.17.31 | Submit defects: Resistance cut-off values |  | 1h | 2009-03-24 | 2009-03-24 | 161 |  |  | 2009-03-16 | 2009-03-16 | 1h | 65.45d | 0d |  |  | Mike | 1h |  | 180 | MDSS009 |
| 163 | 1.17.32 | Write change request: resistance assays |  | 4h | 2009-03-24 | 2009-03-25 | 162 |  |  | 2009-03-16 | 2009-03-16 | 4h | 65.45d | 0d |  |  | Mike | 4h |  | 181 |  |
| 164 | 1.17.33 | Test: Efficacy assay |  | 0.12d? | 2009-03-25 | 2009-03-25 | 163 |  |  | 2009-03-16 | 2009-03-16 | 0.12d? | 65.45d | 0d |  |  | Mike | 1h |  | 182 | MDSS025 |
| 165 | 1.17.34 | Submit defects: Efficacy assay |  | 1h | 2009-03-25 | 2009-03-25 | 164 |  |  | 2009-03-16 | 2009-03-16 | 1h | 65.45d | 0d |  |  | Mike | 1h |  | 183 | MDSS025 |
| 166 | 1.17.35 | Write change request: Efficacy assay |  | 2h | 2009-03-25 | 2009-03-25 | 165 |  |  | 2009-03-16 | 2009-03-17 | 2h | 65.45d | 0d |  |  | Mike | 2h |  | 184 | MDSS025 |

| ID | WBS | Task | Duration | Start | Finish | Predecessors | Complete | Remaining | Baseline start | Baseline finish | Baseline duration | Total slack | Free slack | Constraint | Resources | Work | Actual work | Text1 | Text4 |
| --- | --- | --- | --- | --- | --- | --- | --- | --- | --- | --- | --- | --- | --- | --- | --- | --- | --- | --- | --- |
| 167 | 1.17.36 | **Test: Entomology dynamic query and reports** | 5.89d | 2009-03-27 | 2009-04-06 | 134 |  |  | 2009-03-12 | 2009-03-20 | 5.89d | 38.25d |  |  |  | 33h |  | MDSS145 | 185 |
| 168 | 1.17.36.1 | Test: add Geo-entity fields | 1.43h | 2009-03-27 | 2009-03-30 |  |  |  | 2009-03-12 | 2009-03-12 | 1.43h | 38.25d | 0d |  | Marlize [70%] | 1h |  | MDSS145 | 186 |
| 169 | 1.17.36.2 | Test: add other fields | 1.43h | 2009-03-30 | 2009-03-30 | 168 |  |  | 2009-03-12 | 2009-03-13 | 1.43h | 38.25d | 0d |  | Marlize [70%] | 1h |  | MDSS145 | 187 |
| 170 | 1.17.36.3 | Test: add functions | 1.43h | 2009-03-30 | 2009-03-30 | 169 |  |  | 2009-03-13 | 2009-03-13 | 1.43h | 38.25d | 0d |  | Marlize [70%] | 1h |  | MDSS145 | 188 |
| 171 | 1.17.36.4 | Test: date ranges on collection date or assay date | 1.43h | 2009-03-30 | 2009-03-30 | 170 |  |  | 2009-03-13 | 2009-03-13 | 1.43h | 38.25d | 0d |  | Marlize [70%] | 1h |  | MDSS145 | 189 |
| 172 | 1.17.36.5 | Submit defects: Build query | 2.86h | 2009-03-30 | 2009-03-30 | 171 |  |  | 2009-03-13 | 2009-03-13 | 2.86h | 38.25d | 0d |  | Marlize [70%] | 2h |  | MDSS145 | 190 |
| 173 | 1.17.36.6 | Test: save query | 1.43h | 2009-03-30 | 2009-03-31 | 172 |  |  | 2009-03-13 | 2009-03-13 | 1.43h | 38.25d | 0d |  | Marlize [70%] | 1h |  | MDSS056 | 191 |
| 174 | 1.17.36.7 | Test: run a saved query | 1.43h | 2009-03-31 | 2009-03-31 | 173 |  |  | 2009-03-13 | 2009-03-16 | 1.43h | 38.25d | 0d |  | Marlize [70%] | 1h |  | MDSS056 | 192 |
| 175 | 1.17.36.8 | Test: modify a saved query | 1.43h | 2009-03-31 | 2009-03-31 | 174 |  |  | 2009-03-16 | 2009-03-16 | 1.43h | 38.25d | 0d |  | Marlize [70%] | 1h |  | MDSS056 | 193 |
| 176 | 1.17.36.9 | Test: export query results | 1.43h | 2009-03-31 | 2009-03-31 | 175 |  |  | 2009-03-16 | 2009-03-16 | 1.43h | 38.25d | 0d |  | Marlize [70%] | 1h |  | MDSS071 | 194 |
| 177 | 1.17.36.10 | Test: dump functionality | 1.43h | 2009-03-31 | 2009-03-31 | 176 |  |  | 2009-03-16 | 2009-03-16 | 1.43h | 38.25d | 0d |  | Marlize [70%] | 1h |  |  | 195 |
| 178 | 1.17.36.11 | Submit defects: deploy query | 2.86h | 2009-03-31 | 2009-04-01 | 177 |  |  | 2009-03-16 | 2009-03-17 | 2.86h | 38.25d | 0d |  | Marlize [70%] | 2h |  |  | 196 |
| 179 | 1.17.36.12 | Test: create thematic map from query | 11.43h | 2009-04-01 | 2009-04-02 | 178 |  |  | 2009-03-17 | 2009-03-18 | 11.43h | 38.25d | 0d |  | Marlize [70%] | 8h |  |  | 197 |
| 180 | 1.17.36.13 | Test: find query results in BIRT | 1.43h | 2009-04-02 | 2009-04-02 | 179 |  |  | 2009-03-18 | 2009-03-18 | 1.43h | 38.25d | 0d |  | Marlize [70%] | 1h |  | MDSS062 | 198 |
| 181 | 1.17.36.14 | Test: create a report template (table) | 2.86h | 2009-04-02 | 2009-04-03 | 180 |  |  | 2009-03-18 | 2009-03-18 | 2.86h | 38.25d | 0d |  | Marlize [70%] | 2h |  | MDSS062 | 199 |
| 182 | 1.17.36.15 | Test: Link a report template to query | 1.43h | 2009-04-03 | 2009-04-03 | 181 |  |  | 2009-03-18 | 2009-03-19 | 1.43h | 38.25d | 0d |  | Marlize [70%] | 1h |  | MDSS056 | 200 |
| 183 | 1.17.36.16 | Test: view/print/save a report | 1.43h | 2009-04-03 | 2009-04-03 | 182 |  |  | 2009-03-19 | 2009-03-19 | 1.43h | 38.25d | 0d |  | Marlize [70%] | 1h |  | MDSS062 | 201 |
| 184 | 1.17.36.17 | Test: change linked report | 1.43h | 2009-04-03 | 2009-04-03 | 183 |  |  | 2009-03-19 | 2009-03-19 | 1.43h | 38.25d | 0d |  | Marlize [70%] | 1h |  | MDSS062 | 202 |
| 185 | 1.17.36.18 | Submit defects: deploy query | 2.86h | 2009-04-03 | 2009-04-06 | 184 |  |  | 2009-03-19 | 2009-03-19 | 2.86h | 38.25d | 0d |  | Marlize [70%] | 2h |  |  | 203 |
| 186 | 1.17.36.19 | Write change request: Dynamic query | 5.71h | 2009-04-06 | 2009-04-06 | 185 |  |  | 2009-03-19 | 2009-03-20 | 5.71h | 38.25d | 0d |  | Marlize [70%] | 4h |  |  | 204 |
| 187 | 1.18 | **Finalise Query Use Cases** | 36.43d | 2009-02-23 A | 2009-04-14 |  | 72% | 10.34d | 2009-02-13 | 2009-04-08 | 38.11d | 39.85d |  |  |  | 72h | 40h |  | 205 |
| 188 | 1.18.1 | UC: Individual Cases - query | 11.43h | 2009-02-23 A | 2009-02-24 A |  | 100% |  | 2009-02-18 | 2009-02-20 | 11.43h |  |  | start no earlier than 2009-02-21 | Miguel [70%] | 8h | 8h | MDSS128 | 208 |
| 189 | 1.18.2 | UC: Aggregated Cases - query | 11.43h | 2009-02-25 A | 2009-02-27 A | 111 | 100% |  | 2009-02-13 | 2009-02-17 | 11.43h |  |  | start no earlier than 2009-02-24 | Miguel [70%] | 8h | 8h | MDSS129 | 206 |
| 190 | 1.18.3 | UC: Indicator survey - query | 11.43h | 2009-03-03 A | 2009-03-04 A | 189 | 100% |  | 2009-02-17 | 2009-02-18 | 11.43h |  |  | start no earlier than 2009-03-03 | Miguel [70%] | 8h | 8h | MDSS140 | 207 |
| 191 | 1.18.4 | UC: IRS - query | 81.14h | 2009-02-25 A | 2009-03-11 | 188, 111 | 99% | 0h | 2009-02-20 | 2009-02-24 | 22.86h | 49d | 26.25d | finish no earlier than 2009-03-11 | Marlize [70%] | 16h | 16h | MDSS132 | 209 |
| 192 | 1.18.5 | UC: ITN FacilityCommunity distribution - query | 11.43h | 2009-04-06 | 2009-04-08 | 186 |  |  | 2009-04-01 | 2009-04-02 | 11.43h | 38.25d | 0d |  | Marlize [70%] | 8h |  | MDSS135 | 210 |
| 193 | 1.18.6 | UC: ITN household use - query | 11.43h | 2009-04-08 | 2009-04-09 | 192 |  |  | 2009-04-02 | 2009-04-06 | 11.43h | 38.25d | 0d |  | Marlize [70%] | 8h |  | MDSS138 | 211 |
| 194 | 1.18.7 | UC: IPT individual - query | 11.43h | 2009-04-09 | 2009-04-13 | 193 |  |  | 2009-04-06 | 2009-04-07 | 11.43h | 38.25d | 0d |  | Marlize [70%] | 8h |  | MDSS130 | 212 |
| 195 | 1.18.8 | UC: IPT aggregated - query | 11.43h | 2009-04-13 | 2009-04-14 | 194 |  |  | 2009-04-07 | 2009-04-08 | 11.43h | 39.85d | 0d |  | Marlize [70%] | 8h |  | MDSS131 | 213 |

| ID | WBS | Task | Duration | Start | Finish | Predecessors | Complete | Remaining | Baseline start | Baseline finish | Baseline duration | Total slack | Free slack | Constraint | Resources | Work | Actual work | Cost | Baseline cost | Text4 | Text1 | Text2 |
| --- | --- | --- | --- | --- | --- | --- | --- | --- | --- | --- | --- | --- | --- | --- | --- | --- | --- | --- | --- | --- | --- | --- |
| 196 | 1.19 | **Complete Development** | 59d? | 2009-03-09 A | 2009-05-28 |  |  | 58.76d? | 2009-03-02 | 2009-05-28 | 63.25d? | 23d |  |  |  | 1632h | 7.2h | 170,200 | 172,960 | 214 |  |  |
| 197 | 1.19.1 | **Generic Development** | 28.53d? | 2009-03-09 A | 2009-04-16 |  | 2% | 28d? | 2009-03-05 | 2009-04-14 | 28.76d? | 47.47d |  |  |  | 344h | 7.2h | 31,280 | 31,280 | 215 |  |  |
| 198 | 1.19.1.1 | Dev: Reconstruct saved query | 47.06h | 2009-03-16 | 2009-03-23 | 6, 12 |  |  | 2009-03-12 | 2009-03-20 | 47.06h | 46.41d | 0d |  | Nathan [85%] | 40h |  | 4,600 | 4,600 | 216 | SYS06-4 |  |
| 199 | 1.19.1.2 | Dev: Overall site layout | 47.06h | 2009-03-23 | 2009-03-31 | 198 |  |  | 2009-03-20 | 2009-03-27 | 47.06h | 46.41d | 0d |  | Nathan [85%] | 40h |  | 4,600 | 4,600 | 217 | SYS05 |  |
| 200 | 1.19.1.3 | Dev: Configure system variables | 8h | 2009-03-17 | 2009-03-18 | 45 |  |  | 2009-03-23 | 2009-03-24 | 8h | 49.5d | 0d |  | Darrell | 8h |  | 920 | 920 | 218 | MDSS109 | 1 day |
| 201 | 1.19.1.4 | Dev: maintain catalogues | 28.23h | 2009-03-31 | 2009-04-06 | 199 |  |  | 2009-03-27 | 2009-04-02 | 28.23h | 46.41d | 0d |  | Nathan [85%] | 24h |  | 2,760 | 2,760 | 219 | MDSS103 |  |
| 202 | 1.19.1.5 | Dev: Epi week - set or change | 18.82h | 2009-03-11 | 2009-03-13 |  |  |  | 2009-03-09 | 2009-03-12 | 18.82h | 26.24d | 0d | start no earlier than 2009-03-11 | Thomas (Oz) [85%] | 16h |  | 1,840 | 1,840 | 220 | MDSS119 | 2 days |
| 203 | 1.19.1.6 | Dev: define season start and end dates | 18.82h | 2009-03-13 | 2009-03-17 | 202 |  |  | 2009-03-12 | 2009-03-16 | 18.82h | 26.24d | 0d |  | Thomas (Oz) [85%] | 16h |  | 1,840 | 1,840 | 221 | MDSS127 | 2 days |
| 204 | 1.19.1.7 | Dev: enter/maintain people in the system | 18.82h | 2009-03-17 | 2009-03-20 | 203 |  |  | 2009-03-16 | 2009-03-19 | 18.82h | 26.24d | 0d |  | Thomas (Oz) [85%] | 16h |  | 1,840 | 1,840 | 222 | MDSS114 |  |
| 205 | 1.19.1.8 | Dev: create synonyms for imported Geo entities | 32h | 2009-03-20 | 2009-03-25 | 46 |  |  | 2009-03-13 | 2009-03-19 | 32h | 22.75d | 0d |  | Justin | 32h |  | 3,680 | 3,680 | 223 | MDSS112 |  |
| 206 | 1.19.1.9 | Dev: User Admin Screen for account management | 3d? | 2009-03-24 | 2009-03-26 | 41 |  |  | 2009-04-06 | 2009-04-08 | 3d? | 62d | 0d | start no earlier than 2009-03-17 | Eric | 24h |  |  |  | 224 |  | 3 days |
| 207 | 1.19.1.10 | Dev: user Admin Screen for Role assignment | 2.35d? | 2009-04-06 | 2009-04-08 | 201 |  |  | 2009-04-02 | 2009-04-06 | 2.35d? | 46.41d | 0d | start no earlier than 2009-03-06 | Nathan [85%] | 16h |  | 1,840 | 1,840 | 225 | MDSS142 | 2 days |
| 208 | 1.19.1.11 | Dev: Add localisable character attributes | 18.82h | 2009-04-08 | 2009-04-10 | 207 |  |  | 2009-04-06 | 2009-04-09 | 18.82h | 46.41d | 0d |  | Nathan [85%] | 16h |  | 1,840 | 1,840 | 226 | SYS01-1 |  |
| 209 | 1.19.1.12 | Dev: CRUD on localisable fields | 48h | 2009-03-09 A | 2009-03-16 | 36 | 15% | 40.8h | 2009-03-05 | 2009-03-12 | 48h | 62d | 0d | finish no earlier than 2009-03-16 | Eric | 48h | 7.2h |  |  | 227 | SYS01-2 |  |
| 210 | 1.19.1.13 | Dev: CRUD screen for defining geography universals | 28.23h | 2009-04-10 | 2009-04-16 | 208 |  |  | 2009-04-09 | 2009-04-14 | 28.23h | 46.41d | 0d |  | Nathan [85%] | 24h |  | 2,760 | 2,760 | 228 | SYS07-3 |  |
| 211 | 1.19.1.14 | Change date/time format | 10h | 2009-03-25 | 2009-03-26 | 214 |  |  | 2009-03-31 | 2009-04-01 | 10h | 49.5d | 0d |  | Darrell [80%] | 8h |  | 920 | 920 | 229 | MDSS120 |  |
| 212 | 1.19.1.15 | Change geo root | 20h | 2009-03-26 | 2009-03-31 | 211 |  |  | 2009-04-01 | 2009-04-03 | 20h | 49.5d | 21.75d |  | Darrell [80%] | 16h |  | 1,840 | 1,840 | 230 | MDSS122 |  |
| 213 | 1.19.2 | **Indicator survey** | 11.75d | 2009-03-18 | 2009-04-03 |  |  |  | 2009-03-19 | 2009-03-31 | 8d | 28.25d |  |  |  | 72h |  | 8,280 | 8,280 | 231 |  |  |
| 214 | 1.19.2.1 | Dev: Indicator survey - CRUD | 40h | 2009-03-18 | 2009-03-25 | 200 |  |  | 2009-03-24 | 2009-03-31 | 40h | 49.5d | 0d |  | Darrell [80%] | 32h |  | 3,680 | 3,680 | 232 | MDSS026 |  |
| 215 | 1.19.2.2 | Dev - Indicator survey - dynamic query | 50h | 2009-03-26 | 2009-04-03 | 205, 190 |  |  | 2009-03-19 | 2009-03-27 | 50h | 22.75d | 0d |  | Justin [80%] | 40h |  | 4,600 | 4,600 | 233 | MDSS140 |  |
| 216 | 1.19.3 | **Case Surveilance** | 43d | 2009-03-16 | 2009-05-13 |  |  |  | 2009-03-02 | 2009-05-07 | 48.25d | 18d |  |  |  | 448h |  | 51,520 | 51,520 | 234 |  |  |
| 217 | 1.19.3.1 | Dev: aggregated cases - CRUD | 40h | 2009-03-16 | 2009-03-20 |  |  |  | 2009-03-02 | 2009-03-06 | 40h | 18d | 0d | start no earlier than 2009-03-16 | TBD | 40h |  | 4,600 | 4,600 | 235 | MDSS002 | 5 days |
| 218 | 1.19.3.2 | Dev: calculate CFR | 37.65h | 2009-03-20 | 2009-03-26 | 204 |  |  | 2009-03-19 | 2009-03-25 | 37.65h | 26.24d | 0d |  | Thomas (Oz) [85%] | 32h |  | 3,680 | 3,680 | 236 | MDSS087 | 4 days |
| 219 | 1.19.3.3 | Dev: aggregated cases - dynamic query | 40h | 2009-03-23 | 2009-03-27 | 217, 189 |  |  | 2009-03-09 | 2009-03-13 | 40h | 18d | 0d |  | TBD | 40h |  | 4,600 | 4,600 | 237 | MDSS129 | 5 days |
| 220 | 1.19.3.4 | Dev: Input or modify population data | 32h | 2009-03-30 | 2009-04-02 | 219 |  |  | 2009-03-16 | 2009-03-19 | 32h | 18d | 0d | start no earlier than 2009-02-01 | TBD | 32h |  | 3,680 | 3,680 | 238 | MDSS003 | 4 days |
| 221 | 1.19.3.5 | Dev: Import population or annual growth rate data | 40h | 2009-04-03 | 2009-04-09 | 220 |  |  | 2009-03-20 | 2009-03-26 | 40h | 18d | 0d |  | TBD | 40h |  | 4,600 | 4,600 | 239 | MDSS083 |  |
| 222 | 1.19.3.6 | Dev: input/modify outbreak thresholds | 32h | 2009-04-10 | 2009-04-15 | 221 |  |  | 2009-03-27 | 2009-04-01 | 32h | 18d | 0d |  | TBD | 32h |  | 3,680 | 3,680 | 240 | MDSS105 | 5 days |
| 223 | 1.19.3.7 | Dev :import outbreak thresholds | 32h | 2009-04-16 | 2009-04-21 | 222 |  |  | 2009-04-02 | 2009-04-07 | 32h | 18d | 0d |  | TBD | 32h |  | 3,680 | 3,680 | 241 | MDSS085 | 5 days |
| 224 | 1.19.3.8 | Dev: Calculate annual or seasonal population | 50h | 2009-05-05 | 2009-05-13 | 251 |  |  | 2009-04-29 | 2009-05-07 | 50h | 27.75d | 0d |  | Darrell [80%] | 40h |  | 4,600 | 4,600 | 242 | MDSS073 | 5 days |
| 225 | 1.19.3.9 | Dev: calculate incidence | 47.06h | 2009-03-26 | 2009-04-03 | 218 |  |  | 2009-03-25 | 2009-04-02 | 47.06h | 26.24d | 0d |  | Thomas (Oz) [85%] | 40h |  | 4,600 | 4,600 | 243 | MDSS086 | 5 days |
| 226 | 1.19.3.10 | Dev: individual cases - CRUD | 40h | 2009-04-22 | 2009-04-28 | 223 |  |  | 2009-04-08 | 2009-04-14 | 40h | 18d | 0d |  | TBD | 40h |  | 4,600 | 4,600 | 244 | MDSS001 | 5 days |
| 227 | 1.19.3.11 | Dev: Outbreak notification | 47.06h | 2009-04-03 | 2009-04-13 | 225 |  |  | 2009-04-02 | 2009-04-10 | 47.06h | 26.24d | 0d |  | Thomas (Oz) [85%] | 40h |  | 4,600 | 4,600 | 245 | MDSS124 | 5 days |
| 228 | 1.19.3.12 | Dev: individual case - dynamic query | 40h | 2009-04-29 | 2009-05-05 | 226, 188 |  |  | 2009-04-15 | 2009-04-21 | 40h | 18d | 0d |  | TBD | 40h |  | 4,600 | 4,600 | 246 | MDSS128 | 5 days |

| ID | WBS | Task | Type | Duration | Start | Finish | Predecessors | Complete | Baseline start | Baseline finish | Baseline duration | Total slack | Free slack | Constraint | Resources | Work | Cost | Baseline cost | Text4 | Text1 | Text2 | Text3 |
| --- | --- | --- | --- | --- | --- | --- | --- | --- | --- | --- | --- | --- | --- | --- | --- | --- | --- | --- | --- | --- | --- | --- |
| 229 | 1.19.4 | **Intervention monitoring** |  | 36.51d | 2009-04-03 | 2009-05-25 |  |  | 2009-03-27 | 2009-05-28 | 43.75d | 22.75d |  |  |  | 712h | 72,680 | 75,440 | 247 |  |  |  |
| 230 | 1.19.4.1 | **IRS** |  | 35d | 2009-04-03 | 2009-05-22 |  |  | 2009-03-27 | 2009-05-21 | 38.75d | 22.75d |  |  |  | 224h | 25,760 | 28,520 | 248 |  |  |  |
| 231 | 1.19.4.1.1 | Dev: enter/maintain spray team member |  | 32h | 2009-05-06 | 2009-05-11 | 228 |  | 2009-04-22 | 2009-04-27 | 32h | 18d | 0d |  | TBD | 32h | 3,680 | 3,680 | 249 | MDSS113 |  |  |
| 232 | 1.19.4.1.2 | Dev: enter/maintain IRS teams |  | 32h | 2009-05-12 | 2009-05-15 | 231 |  | 2009-04-28 | 2009-05-01 | 32h | 18d | 0d |  | TBD | 32h | 3,680 | 3,680 | 250 | MDSS141 |  |  |
| 233 | 1.19.4.1.3 | Dev: BE - input or modify IRS targets |  | 30h | 2009-04-03 | 2009-04-08 | 215 |  | 2009-03-27 | 2009-04-02 | 30h | 22.75d | 0d |  | Justin [80%] | 24h | 2,760 | 2,760 | 251 | MDSS028 |  |  |
| 234 | 1.19.4.1.4 | Dev: GUI - input or modify IRS targets |  | 30h | 2009-05-14 | 2009-05-19 | 224, 233 |  | 2009-05-07 | 2009-05-12 | 30h | 27.75d | 0d |  | Darrell [80%] | 24h | 2,760 | 2,760 | 252 | MDSS028 |  |  |
| 235 | 1.19.4.1.5 | Dev: Configure items relating to application rate |  | 50h | 2009-04-09 | 2009-04-17 | 233 |  | 2009-04-02 | 2009-04-10 | 50h | 22.75d | 0d |  | Justin [80%] | 40h | 4,600 | 4,600 | 253 | MDSS106 |  |  |
| 236 | 1.19.4.1.6 | Dev: Configure items relating to application rate |  | 20h | 2009-05-19 | 2009-05-22 | 234, 235 |  | 2009-05-13 | 2009-05-15 | 20h | 27.75d |  |  | Darrell [80%] | 16h | 1,840 | 1,840 | 254 | MDSS106 |  |  |
| 237 | 1.19.4.1.7 | Dev: IRS - CRUD |  | 28.23h | 2009-04-16 | 2009-04-22 | 210 |  | 2009-04-14 | 2009-04-20 | 28.23h | 46.41d | 0d |  | Nathan [85%] | 24h | 2,760 | 2,760 | 255 | MDSS027 |  |  |
| 238 | 1.19.4.1.8 | Dev: IRS - dynamic query |  | 40h | 2009-04-17 | 2009-04-24 | 235, 191 |  | 2009-04-10 | 2009-04-17 | 40h | 22.75d | 0d | start no earlier than 2009-03-16 | Justin [80%] | 32h | 3,680 | 3,680 | 257 | MDSS132 |  |  |
| 239 | 1.19.4.2 | **Larvaciding** |  | 4.71d | 2009-04-13 | 2009-04-20 |  |  | 2009-04-10 | 2009-04-17 | 4.71d | 26.24d |  |  |  | 32h | 3,680 | 3,680 | 258 |  |  |  |
| 240 | 1.19.4.2.1 | Dev: larviciding - CRUD |  | 37.65h | 2009-04-13 | 2009-04-20 | 227 |  | 2009-04-10 | 2009-04-17 | 37.65h | 26.24d | 0d |  | Thomas (Oz) [85%] | 32h | 3,680 | 3,680 | 259 | MDSS031 | 8 days |  |
| 241 | 1.19.4.3 | **ITN** |  | 25.53d | 2009-04-20 | 2009-05-25 |  |  | 2009-04-17 | 2009-05-22 | 25.53d | 26.24d |  |  |  | 280h | 23,000 | 23,000 | 260 |  |  |  |
| 242 | 1.19.4.3.1 | Dev: ITN aggregated data - CRUD |  | 47.06h | 2009-04-20 | 2009-04-28 | 240 |  | 2009-04-17 | 2009-04-27 | 47.06h | 26.24d | 0d |  | Thomas (Oz) [85%] | 40h | 4,600 | 4,600 | 261 | MDSS080 | 5 days |  |
| 243 | 1.19.4.3.2 | Dev: ITN aggregated data - query |  | 8h | 2009-04-28 | 2009-04-29 | 242 |  | 2009-04-27 | 2009-04-28 | 8h | 26.24d | 0d |  |  | 40h |  |  | 262 | MDSS136 |  |  |
| 244 | 1.19.4.3.3 | Dev: ITN facility distribution - CRUD |  | 56.47h | 2009-04-29 | 2009-05-08 | 243 |  | 2009-04-28 | 2009-05-07 | 56.47h | 26.24d | 0d |  | Thomas (Oz) [85%] | 48h | 5,520 | 5,520 | 263 | MDSS030 | 5 days |  |
| 245 | 1.19.4.3.4 | Dev: ITN community distribution - CRUD |  | 37.65h | 2009-05-08 | 2009-05-14 | 244 |  | 2009-05-07 | 2009-05-13 | 37.65h | 26.24d | 0d |  | Thomas (Oz) [85%] | 32h | 3,680 | 3,680 | 264 | MDSS079 | 5 days |  |
| 246 | 1.19.4.3.5 | Dev: ITN by facility/community - query |  | 8h | 2009-05-14 | 2009-05-15 | 245, 192 |  | 2009-05-13 | 2009-05-14 | 8h | 26.24d | 0d |  |  | 40h |  |  | 265 | MDSS135 |  |  |
| 247 | 1.19.4.3.6 | Dev: ITN by household - CRUD |  | 47.06h | 2009-05-15 | 2009-05-25 | 245, 246 |  | 2009-05-14 | 2009-05-22 | 47.06h | 26.24d |  | start no earlier than 2009-03-21 | Thomas (Oz) [85%] | 40h | 4,600 | 4,600 | 266 | MDSS082 | 5 days | 10 |
| 248 | 1.19.4.3.7 | Dev: ITN by household - query |  | 40h | 2009-05-18 | 2009-05-22 | 232, 193 |  | 2009-05-04 | 2009-05-08 | 40h | 18d | 0d | start no earlier than 2009-04-10 | TBD | 40h | 4,600 | 4,600 | 267 | MDSS138 |  | 10 |
| 249 | 1.19.4.4 | **Intervention Planning** |  | 7.5d | 2009-04-24 | 2009-05-05 |  |  | 2009-04-17 | 2009-04-28 | 7.5d | 22.75d |  |  |  | 48h | 5,520 | 5,520 | 268 |  |  |  |
| 250 | 1.19.4.4.1 | Dev: BE - Intervention planning |  | 30h | 2009-04-24 | 2009-04-29 | 238 |  | 2009-04-17 | 2009-04-23 | 30h | 22.75d | 0d |  | Justin [80%] | 24h | 2,760 | 2,760 | 269 | MDSS077 |  |  |
| 251 | 1.19.4.4.2 | Dev: GUI - Intervention planning |  | 30h | 2009-04-30 | 2009-05-05 | 250, 212 |  | 2009-04-23 | 2009-04-28 | 30h | 27.75d | 0d |  | Darrell [80%] | 24h | 2,760 | 2,760 | 270 | MDSS077 |  |  |
| 252 | 1.19.4.5 | **IPT** |  | 15d | 2009-04-30 | 2009-05-20 |  |  | 2009-04-23 | 2009-05-28 | 25d | 22.75d |  |  |  | 128h | 14,720 | 14,720 | 271 |  |  |  |
| 253 | 1.19.4.5.1 | Dev: IPT aggregated - CRUD |  | 20h | 2009-04-30 | 2009-05-04 | 250 |  | 2009-04-23 | 2009-04-27 | 20h | 22.75d | 0d |  | Justin [80%] | 16h | 1,840 | 1,840 | 272 | MDSS069 |  |  |
| 254 | 1.19.4.5.2 | Dev: IPT aggregated - CRUD |  | 20h | 2009-05-04 | 2009-05-06 | 253 |  | 2009-05-21 | 2009-05-25 | 20h | 36.5d | 0d |  | Darrell [80%] | 16h | 1,840 | 1,840 | 273 | MDSS069 |  |  |
| 255 | 1.19.4.5.3 | Dev: IPT aggregated - query |  | 40h | 2009-05-04 | 2009-05-11 | 194, 253 |  | 2009-04-27 | 2009-05-04 | 40h | 22.75d | 0d |  | Justin [80%] | 32h | 3,680 | 3,680 | 274 | MDSS131 |  |  |
| 256 | 1.19.4.5.4 | Dev: BE - IPT individual - CRUD |  | 20h | 2009-05-11 | 2009-05-13 | 255 |  | 2009-05-04 | 2009-05-07 | 20h | 22.75d | 0d |  | Justin [80%] | 16h | 1,840 | 1,840 | 275 | MDSS081 |  | 10 |
| 257 | 1.19.4.5.5 | Dev: GUI - IPT individual - CRUD |  | 20h | 2009-05-07 | 2009-05-11 | 254 |  | 2009-05-25 | 2009-05-28 | 20h | 36.5d |  |  | Darrell [80%] | 16h | 1,840 | 1,840 | 276 | MDSS081 |  | 10 |
| 258 | 1.19.4.5.6 | Dev: IPT individual - query |  | 40h | 2009-05-14 | 2009-05-20 | 195, 256 |  | 2009-05-07 | 2009-05-14 | 40h | 22.75d | 0d |  | Justin [80%] | 32h | 3,680 | 3,680 | 277 | MDSS130 |  | 10 |
| 259 | 1.19.5 | Dev: BE - Stock Control |  | 28.23h | 2009-04-22 | 2009-04-27 | 237 |  | 2009-04-20 | 2009-04-23 | 28.23h | 46.41d |  |  | Nathan [85%] | 24h | 2,760 | 2,760 | 278 | MDSS032 |  |  |
| 260 | 1.19.6 | Dev: GUI - Stock Control |  | 32h | 2009-05-25 | 2009-05-28 | 248 |  | 2009-05-11 | 2009-05-14 | 32h | 18d | 0d |  | TBD | 32h | 3,680 | 3,680 | 279 | MDSS032 |  |  |
| 261 | 2 | Dev: Backup the data and configuration file |  | 40h | 2009-05-29 | 2009-06-04 | 260 |  | 2009-05-15 | 2009-05-21 | 40h | 18d |  |  | TBD | 40h | 4,600 | 4,600 | 280 | MDSS065 |  |  |
| 262 | 3 | Dev: Select the user language | milestone | 0h | 2009-02-02 A | 2009-02-02 A |  | 100% | 2009-02-02 | 2009-02-02 | 0h |  |  |  |  |  |  |  | 281 | MDSS118 |  |  |
| 263 | 4 | Dev: Change date/time format |  | 10h | 2009-05-21 | 2009-05-22 | 258 |  | 2009-05-14 | 2009-05-15 | 10h | 22.75d | 0d |  | Justin [80%] | 8h | 920 | 920 | 282 | MDSS120 |  |  |

| ID | WBS | Task | Duration | Start | Finish | Predecessors | Complete | Remaining | Baseline start | Baseline finish | Baseline duration | Total slack | Free slack | Constraint | Resources | Work | Actual work | Text4 | Text1 | Text3 | Text2 |
| --- | --- | --- | --- | --- | --- | --- | --- | --- | --- | --- | --- | --- | --- | --- | --- | --- | --- | --- | --- | --- | --- |
| 264 | 5 | **Complete Test Cases** | 45.86d? | 2009-02-11 A | 2009-04-15 |  | 55% | 20.65d? | 2009-02-11 | 2009-04-01 | 35.25d? | 54.14d |  |  |  | 191.2h | 87.2h | 283 |  |  |  |
| 265 | 5.1 | **Entomology** | 4d? | 2009-03-25 | 2009-03-31 |  |  |  | 2009-03-17 | 2009-03-23 | 4d? | 65.45d |  |  |  | 16h |  | 284 |  |  |  |
| 266 | 5.1.1 | TC: Biochemical cut-off values | 1d? | 2009-03-25 | 2009-03-26 | 166 |  |  | 2009-03-17 | 2009-03-18 | 1d? | 65.45d | 0d |  | Mike [50%] | 4h |  | 285 | MDSS014 |  |  |
| 267 | 5.1.2 | TC: Adult knock down assay | 1d? | 2009-03-26 | 2009-03-27 | 266 |  |  | 2009-03-18 | 2009-03-19 | 1d? | 65.45d | 0d |  | Mike [50%] | 4h |  | 286 | MDSS006 |  |  |
| 268 | 5.1.3 | TC: Larvae discriminating dose assay | 1d? | 2009-03-27 | 2009-03-30 | 267 |  |  | 2009-03-19 | 2009-03-20 | 1d? | 65.45d | 0d |  | Mike [50%] | 4h |  | 287 | MDSS008 | 10 |  |
| 269 | 5.1.4 | TC: Efficacy assay | 1d? | 2009-03-30 | 2009-03-31 | 268 |  |  | 2009-03-20 | 2009-03-23 | 1d? | 65.45d |  |  | Mike [50%] | 4h |  | 288 | MDSS025 |  |  |
| 270 | 5.2 | **System** | 18d | 2009-02-11 A | 2009-03-06 A |  | 100% |  | 2009-02-11 | 2009-02-26 | 11.25d |  |  |  |  | 48h | 48h | 289 |  |  |  |
| 271 | 5.2.1 | TC: Configure system variables | 10h | 2009-02-12 A | 2009-02-13 A | 284 | 100% |  | 2009-02-12 | 2009-02-13 | 10h |  |  | start no earlier than 2009-02-11 | Sanika [40%] | 4h | 4h | 290 | MDSS109 |  | 1 day |
| 272 | 5.2.2 | TC: maintain catalogues | 10h | 2009-02-13 A | 2009-02-16 A | 271 | 100% |  | 2009-02-13 | 2009-02-16 | 10h |  |  |  | Sanika [40%] | 4h | 4h | 291 | MDSS103 |  |  |
| 273 | 5.2.3 | TC: Epi week - set or change | 10h | 2009-02-16 A | 2009-02-17 A | 272 | 100% |  | 2009-02-16 | 2009-02-17 | 10h |  |  |  | Sanika [40%] | 4h | 4h | 292 | MDSS119 |  | 2 days |
| 274 | 5.2.4 | TC: define season start and end dates | 10h | 2009-02-23 A | 2009-02-24 A | 273 | 100% |  | 2009-02-18 | 2009-02-19 | 10h |  |  | start no earlier than 2009-02-21 | Sanika [40%] | 4h | 4h | 293 | MDSS127 |  | 2 days |
| 275 | 5.2.5 | TC: enter/maintain people in the system | 10h | 2009-02-24 A | 2009-02-25 A | 274 | 100% |  | 2009-02-19 | 2009-02-20 | 10h |  |  | start no earlier than 2009-02-21 | Sanika [40%] | 4h | 4h | 294 | MDSS114 |  |  |
| 276 | 5.2.6 | TC: create synonyms for imported Geo entities | 10h | 2009-02-25 A | 2009-02-26 A | 275 | 100% |  | 2009-02-20 | 2009-02-23 | 10h |  |  |  | Sanika [40%] | 4h | 4h | 295 | MDSS112 |  |  |
| 277 | 5.2.7 | TC: User Admin Screen for account management | 10h | 2009-02-11 A | 2009-02-12 A |  | 100% |  | 2009-02-11 | 2009-02-12 | 10h |  |  | start no earlier than 2009-02-11 | Saul [40%] | 4h | 4h | 296 | MDSS142 |  | 3 days |
| 278 | 5.2.8 | TC: user Admin Screen for Role assignment | 10h | 2009-02-12 A | 2009-02-13 A | 277 | 100% |  | 2009-02-12 | 2009-02-13 | 10h |  |  | start no earlier than 2009-02-01 | Saul [40%] | 4h | 4h | 297 | MDSS144 |  | 2 days |
| 279 | 5.2.9 | TC: Change date/time format | 10h | 2009-03-02 A | 2009-03-03 A | 278 | 100% |  | 2009-02-19 | 2009-02-20 | 10h |  |  | start no earlier than 2009-03-02 | Saul [40%] | 4h | 4h | 301 | MDSS120 |  |  |
| 280 | 5.2.10 | TC: Change geo root | 10h | 2009-03-03 A | 2009-03-04 A | 279 | 100% |  | 2009-02-20 | 2009-02-23 | 10h |  |  |  | Saul [40%] | 4h | 4h | 302 | MDSS122 |  |  |
| 281 | 5.2.11 | TC: Select the user language | 10h | 2009-03-04 A | 2009-03-05 A | 280 | 100% |  | 2009-02-23 | 2009-02-24 | 10h |  |  |  | Saul [40%] | 4h | 4h | 303 | MDSS118 |  |  |
| 282 | 5.2.12 | TC: Change date/time format | 10h | 2009-03-05 A | 2009-03-06 A | 281 | 100% |  | 2009-02-25 | 2009-02-26 | 10h |  |  |  | Saul [40%] | 4h | 4h | 304 | MDSS120 |  |  |
| 283 | 5.3 | **Indicator Survey** | 1.25d | 2009-02-11 A | 2009-02-12 A |  | 100% |  | 2009-02-11 | 2009-02-12 | 1.25d |  |  |  |  | 4h | 4h | 305 |  |  |  |
| 284 | 5.3.1 | TC: Indicator survey - CRUD | 10h | 2009-02-11 A | 2009-02-12 A |  | 100% |  | 2009-02-11 | 2009-02-12 | 10h |  |  | start no earlier than 2009-02-11 | Sanika [40%] | 4h | 4h | 306 | MDSS026 |  |  |
| 285 | 5.4 | **Case Surveilance** | 199.16h | 2009-03-11 | 2009-04-15 |  |  |  | 2009-03-12 | 2009-03-25 | 68.58h | 54.85d |  |  |  | 48h |  | 308 |  |  |  |
| 286 | 5.4.1 | TC: aggregated cases - CRUD | 8h | 2009-03-11 | 2009-03-12 | 311 |  |  | 2009-03-12 | 2009-03-13 | 5.71h | 68.75d | 0d | start no earlier than 2009-03-10 | Dave [50%] | 4h |  | 309 | MDSS002 |  | 5 days |
| 287 | 5.4.2 | TC: calculate CFR | 8h | 2009-03-12 | 2009-03-13 | 286 |  |  | 2009-03-13 | 2009-03-16 | 5.71h | 68.75d | 0d |  | Dave [50%] | 4h |  | 310 | MDSS087 |  | 4 days |
| 288 | 5.4.3 | TC: aggregated cases - dynamic query | 8h | 2009-03-13 | 2009-03-16 | 287 |  |  | 2009-03-16 | 2009-03-16 | 5.71h | 68.75d | 0d |  | Dave [50%] | 4h |  | 311 | MDSS129 |  | 5 days |
| 289 | 5.4.4 | TC: Input or modify population data | 8h | 2009-03-16 | 2009-03-17 | 288 |  |  | 2009-03-16 | 2009-03-17 | 5.71h | 68.75d | 0d | start no earlier than 2009-02-01 | Dave [50%] | 4h |  | 312 | MDSS003 |  | 4 days |
| 290 | 5.4.5 | TC: Import population or annual growth rate data | 8h | 2009-03-17 | 2009-03-18 | 289 |  |  | 2009-03-17 | 2009-03-18 | 5.71h | 68.75d | 0d |  | Dave [50%] | 4h |  | 313 | MDSS083 |  |  |
| 291 | 5.4.6 | TC: input/modify outbreak thresholds | 8h | 2009-03-18 | 2009-03-19 | 290 |  |  | 2009-03-18 | 2009-03-18 | 5.71h | 68.75d | 0d |  | Dave [50%] | 4h |  | 314 | MDSS105 |  | 5 days |
| 292 | 5.4.7 | TC :import outbreak thresholds | 8h | 2009-03-19 | 2009-03-20 | 291 |  |  | 2009-03-18 | 2009-03-19 | 5.71h | 68.75d | 0d |  | Dave [50%] | 4h |  | 315 | MDSS085 |  | 5 days |
| 293 | 5.4.8 | TC: Calculate annual or seasonal population | 8h | 2009-03-20 | 2009-03-23 | 292 |  |  | 2009-03-19 | 2009-03-20 | 5.71h | 68.75d | 0d |  | Dave [50%] | 4h |  | 316 | MDSS073 |  | 5 days |
| 294 | 5.4.9 | TC: calculate incidence | 8h | 2009-03-23 | 2009-03-24 | 293 |  |  | 2009-03-20 | 2009-03-23 | 5.71h | 68.75d | 0d |  | Dave [50%] | 4h |  | 317 | MDSS086 |  | 5 days |
| 295 | 5.4.10 | TC: individual cases - CRUD | 8h | 2009-03-24 | 2009-03-25 | 294 |  |  | 2009-03-23 | 2009-03-23 | 5.71h | 68.75d | 0d |  | Dave [50%] | 4h |  | 318 | MDSS001 |  | 5 days |
| 296 | 5.4.11 | TC: Outbreak notification | 8h | 2009-03-25 | 2009-03-26 | 295 |  |  | 2009-03-23 | 2009-03-24 | 5.71h | 68.75d |  |  | Dave [50%] | 4h |  | 319 | MDSS124 |  | 5 days |
| 297 | 5.4.12 | TC: individual case - query | 5.71h | 2009-04-14 | 2009-04-15 | 195 |  |  | 2009-03-24 | 2009-03-25 | 5.71h | 39.85d | 0d |  | Marlize [70%] | 4h |  | 320 | MDSS128 |  | 5 days |

| ID | WBS | Task | Duration | Start | Finish | Predecessors | Complete | Remaining | Baseline start | Baseline finish | Baseline duration | Total slack | Free slack | Constraint | Resources | Work | Actual work | Text4 | Text1 | Text2 | Text3 |
| --- | --- | --- | --- | --- | --- | --- | --- | --- | --- | --- | --- | --- | --- | --- | --- | --- | --- | --- | --- | --- | --- |
| 298 | 5.5 | **Intervention monitoring** | 366.88h | 2009-02-11 A | 2009-04-15 |  | 60% | 147.14h | 2009-02-11 | 2009-04-01 | 282.04h | 54.14d |  |  |  | 75.2h | 35.2h | 321 |  |  |  |
| 299 | 5.5.1 | **IRS** | 40h | 2009-03-10 | 2009-03-16 |  |  |  | 2009-03-25 | 2009-03-31 | 34.29h | 71d |  |  |  | 20h |  | 322 |  |  |  |
| 300 | 5.5.1.1 | TC: enter/maintain spray team member | 8h | 2009-03-10 | 2009-03-10 |  |  |  | 2009-03-25 | 2009-03-25 | 5.71h | 71d | 0d | start no earlier than 2009-03-10 | Saul [50%] | 4h |  | 323 | MDSS113 |  |  |
| 301 | 5.5.1.2 | TC: enter/maintain IRS teams | 8h | 2009-03-11 | 2009-03-11 | 300 |  |  | 2009-03-25 | 2009-03-26 | 5.71h | 71d | 0d |  | Saul [50%] | 4h |  | 324 | MDSS141 |  |  |
| 302 | 5.5.1.3 | TC: input or modify IRS targets | 8h | 2009-03-12 | 2009-03-12 | 301 |  |  | 2009-03-26 | 2009-03-27 | 5.71h | 71d | 0d |  | Saul [50%] | 4h |  | 325 | MDSS028 |  |  |
| 303 | 5.5.1.4 | TC: Configure items relating to application rate | 8h | 2009-03-13 | 2009-03-13 | 302 |  |  | 2009-03-27 | 2009-03-30 | 5.71h | 71d | 0d |  | Saul [50%] | 4h |  | 326 | MDSS106 |  |  |
| 304 | 5.5.1.5 | TC: IRS - CRUD | 8h | 2009-03-16 | 2009-03-16 | 303 |  |  | 2009-03-30 | 2009-03-30 | 5.71h | 71d | 0d |  | Saul [50%] | 4h |  | 327 | MDSS027 |  |  |
| 305 | 5.5.2 | **Larvaciding** | 20h | 2009-02-11 A | 2009-02-13 A |  | 100% |  | 2009-02-11 | 2009-02-13 | 20h |  |  |  |  | 4h | 4h | 329 |  |  |  |
| 306 | 5.5.2.1 | TC: larviciding - CRUD | 20h | 2009-02-11 A | 2009-02-13 A |  | 100% |  | 2009-02-11 | 2009-02-13 | 20h |  |  | start no earlier than 2009-02-11 | Lars [20%] | 4h | 4h | 330 | MDSS031 | 8 days |  |
| 307 | 5.5.3 | **ITN** | 138h | 2009-02-26 A | 2009-03-23 |  | 55% | 62.73h | 2009-02-23 | 2009-03-06 | 70h | 71d |  |  |  | 35.2h | 19.2h | 331 |  |  |  |
| 308 | 5.5.3.1 | TC: ITN aggregated data - CRUD | 10h | 2009-02-26 A | 2009-02-27 A | 276 | 100% |  | 2009-02-23 | 2009-02-24 | 10h |  |  |  | Sanika [40%] | 4h | 4h | 332 | MDSS080 | 5 days |  |
| 309 | 5.5.3.2 | TC: ITN facility distribution - CRUD | 10h | 2009-03-02 A | 2009-03-03 A | 308 | 100% |  | 2009-02-26 | 2009-02-27 | 10h |  |  |  | Sanika [40%] | 4h | 4h | 334 | MDSS030 | 5 days |  |
| 310 | 5.5.3.3 | TC: ITN community distribution - CRUD | 10h | 2009-03-03 A | 2009-03-04 A | 309 | 100% |  | 2009-02-27 | 2009-03-02 | 10h |  |  |  | Sanika [40%] | 4h | 4h | 335 | MDSS079 | 5 days |  |
| 311 | 5.5.3.4 | TC: ITN by household - CRUD | 10h | 2009-03-10 A | 2009-03-11 A | 310 | 100% |  | 2009-03-04 | 2009-03-05 | 10h |  |  | start no earlier than 2009-03-10 | Dave [40%] | 4h | 4h | 337 | MDSS082 | 5 days | 10 |
| 312 | 5.5.3.5 | TC: Change visibility of a GUI field | 8h | 2009-03-05 A | 2009-03-06 A |  | 100% |  |  |  |  |  |  |  | Sanika [40%] | 3.2h | 3.2h |  | MDSS117 |  |  |
| 313 | 5.5.3.6 | TC:Indicator survey query | 10h | 2009-03-17 | 2009-03-18 | 304 |  |  |  |  |  | 71d | 0d |  | Sanika [40%] | 4h |  | 307 | MDSS140 |  |  |
| 314 | 5.5.3.7 | TC: ITN aggregated data - query | 10h | 2009-03-18 | 2009-03-19 | 313 |  |  | 2009-02-25 | 2009-02-26 | 10h | 71d | 0d |  | Sanika [40%] | 4h |  | 333 | MDSS136 |  |  |
| 315 | 5.5.3.8 | TC: ITN by facility/community - query | 10h | 2009-03-19 | 2009-03-20 | 314 |  |  | 2009-03-02 | 2009-03-03 | 10h | 71d | 0d |  | Sanika [40%] | 4h |  | 336 | MDSS135 |  |  |
| 316 | 5.5.3.9 | TC: ITN by household - query | 10h | 2009-03-20 | 2009-03-23 | 315 |  |  | 2009-03-05 | 2009-03-06 | 10h | 71d |  | start no earlier than 2009-02-09 | Sanika [40%] | 4h |  | 338 | MDSS138 |  | 10 |
| 317 | 5.5.4 | **Intervention Planning** | 5.71h | 2009-04-15 | 2009-04-15 |  |  |  | 2009-03-31 | 2009-04-01 | 5.71h | 39.85d |  |  |  | 4h |  | 339 |  |  |  |
| 318 | 5.5.4.1 | TC: Intervention planning | 5.71h | 2009-04-15 | 2009-04-15 | 297 |  |  | 2009-03-31 | 2009-04-01 | 5.71h | 39.85d | 0d |  | Marlize [70%] | 4h |  | 340 | MDSS077 |  |  |
| 319 | 5.5.5 | **IPT** | 40h | 2009-02-13 A | 2009-02-20 A |  | 100% |  | 2009-02-13 | 2009-02-20 | 40h |  |  |  |  | 8h | 8h | 341 |  |  |  |
| 320 | 5.5.5.1 | TC: IPT aggregated - CRUD | 20h | 2009-02-13 A | 2009-02-17 A | 306 | 100% |  | 2009-02-13 | 2009-02-17 | 20h |  |  |  | Lars [20%] | 4h | 4h | 342 | MDSS069 |  |  |
| 321 | 5.5.5.2 | TC: IPT individual - CRUD | 20h | 2009-02-18 A | 2009-02-20 A | 320 | 100% |  | 2009-02-18 | 2009-02-20 | 20h |  |  |  | Lars [20%] | 4h | 4h | 343 | MDSS081 |  | 10 |

| ID | WBS | Task | Type | Duration | Start | Finish | Predecessors | Complete | Baseline start | Baseline finish | Baseline duration | Total slack | Free slack | Constraint | Resources | Work | Actual work | Cost | Baseline cost | Text4 | Text1 |
| --- | --- | --- | --- | --- | --- | --- | --- | --- | --- | --- | --- | --- | --- | --- | --- | --- | --- | --- | --- | --- | --- |
| 322 | 5.5.6 | **Stock Control** |  | 20h | 2009-02-20 A | 2009-02-24 A |  | 100% | 2009-02-20 | 2009-02-24 | 20h |  |  |  |  | 4h | 4h |  |  | 344 |  |
| 323 | 5.5.6.1 | TC: Stock Control |  | 20h | 2009-02-20 A | 2009-02-24 A | 321 | 100% | 2009-02-20 | 2009-02-24 | 20h |  |  |  | Lars [20%] | 4h | 4h |  |  | 345 | MDSS032 |
| 324 | 6 | Create standard queries and reports |  | 114.28h | 2009-04-15 | 2009-05-06 | 318 |  | 2009-04-08 | 2009-04-29 | 114.28h | 39.85d |  |  | Marlize [70%] | 80h |  |  |  | 346 |  |
| 325 | 7 | Receive all historical entomological data | milestone | 8h | 2009-03-06 | 2009-03-06 |  |  | 2009-05-04 | 2009-05-04 | 8h | 81d | 0d | start no earlier than 2009-03-06 | MRC | 8h |  |  |  | 347 |  |
| 326 | 8 | Import historical entomological data |  | 8h | 2009-03-09 | 2009-03-09 | 325 |  | 2009-05-05 | 2009-05-05 | 8h | 81d |  |  |  |  |  |  |  | 348 |  |
| 327 | 9 | Receive all historical IRS data | milestone | 8h | 2009-05-04 | 2009-05-04 |  |  | 2009-05-04 | 2009-05-04 | 8h | 40d | 0d | start no earlier than 2009-05-04 |  |  |  |  |  | 349 |  |
| 328 | 10 | Import all historical IRS data |  | 8h | 2009-05-05 | 2009-05-05 | 327 |  | 2009-05-05 | 2009-05-05 | 8h | 40d |  |  |  |  |  |  |  | 350 |  |
| 329 | 11 | Order MDSS Hardware | milestone | 0h | 2009-04-01 | 2009-04-01 |  |  | 2009-02-02 | 2009-02-02 | 0h | 65d |  | start no earlier than 2009-04-01 | Mike |  |  |  |  | 351 |  |
| 330 | 12 | Appoint MDSS Administrators | milestone | 0h | 2009-06-01 | 2009-06-01 |  |  | 2009-02-02 | 2009-02-02 | 0h | 22d |  | start no earlier than 2009-06-01 | Mike |  |  |  |  | 352 |  |
| 331 | 13 | Complete system translation into Portuguese |  | 20d | 2009-04-06 | 2009-05-01 |  |  | 2009-04-06 | 2009-05-01 | 20d | 42d |  | start no earlier than 2009-04-06 | Mike [5%] | 8h |  |  |  | 353 |  |
| 332 | 14 | Dev: Installation (minimal or full) |  | 40h | 2009-05-22 | 2009-05-29 | 263 |  | 2009-05-15 | 2009-05-22 | 40h | 22.75d |  |  | Justin | 40h |  | 4,600 | 4,600 | 354 | SYS12 |
| 333 | 15 | Complete Test and Fix Cycle |  | 20d | 2009-05-18 | 2009-06-12 |  |  | 2009-05-18 | 2009-06-12 | 20d | 10d | 0d | start no earlier than 2009-05-18 |  |  |  |  |  | 355 |  |
| 334 | 16 | Implementation planning |  | 16h | 2009-06-15 | 2009-06-16 | 333 |  | 2009-06-15 | 2009-06-16 | 16h | 10d |  |  |  | 16h |  |  |  | 356 |  |
| 335 | 17 | Project Buffer |  | 10d | 2009-06-16 | 2009-06-29 |  |  | 2009-06-16 | 2009-06-29 | 10d | 0d |  | start no earlier than 2009-06-16 |  | 80h |  |  |  | 357 |  |
| 336 | 18 | Ready for Pilot Roll-Out | milestone | 8h | 2009-06-30 | 2009-06-30 | 335 |  | 2009-06-30 | 2009-06-30 | 8h | 0d |  |  |  |  |  |  |  | 358 |  |
